# 软件开发

How a schedule from MS Project changed from version to version. A marks actual dates.

## Version 1 (saved 2018-11-10, file 项目综合管理计划v2.mpp)

Note of the change: XStrachey 整理“”

| ID | WBS | Task | Duration | Start | Finish | Predecessors | Complete | Total float | Constraint |
| --- | --- | --- | --- | --- | --- | --- | --- | --- | --- |
| 1 | 1 | **启动** | 1.5d? | 2018-09-26 08:00 A | 2018-09-27 12:00 A |  | 100% |  |  |
| 2 |  | 可行性分析 | 0.5d? | 2018-09-26 08:00 A | 2018-09-26 12:00 A |  | 100% |  |  |
| 3 |  | 项目干系人识别 | 0.5d? | 2018-09-26 13:00 A | 2018-09-26 17:00 A | 2 | 100% |  |  |
| 4 |  | 制订项目章程 | 0.5d? | 2018-09-27 08:00 A | 2018-09-27 12:00 A | 3 | 100% |  |  |
| 5 | 2 | **计划** | 6d? | 2018-09-26 08:00 A | 2018-10-03 17:00 A |  | 100% |  |  |
| 6 | 2.1 | **项目范围计划** | 4.5d | 2018-09-26 08:00 A | 2018-10-02 12:00 A |  | 100% |  |  |
| 7 |  | 分析项目范围、目标描述 | 4h | 2018-09-26 08:00 A | 2018-09-26 12:00 A |  | 100% |  |  |
| 8 |  | 定义预备资源 | 0.5d | 2018-09-26 13:00 A | 2018-09-26 17:00 A | 7 | 100% |  |  |
| 9 |  | 获得核心资源 | 0.5d | 2018-09-27 08:00 A | 2018-09-27 12:00 A | 8 | 100% |  |  |
| 10 |  | 确定项目范围规划 | 3d | 2018-09-27 13:00 A | 2018-10-02 12:00 A | 9 | 100% |  |  |
| 11 |  | 工作分解结构（WBS） | 1d? | 2018-10-02 13:00 A | 2018-10-03 12:00 A | 10 | 100% |  |  |
| 12 | 2.3 | **项目时间表计划** | 1.5d? | 2018-10-02 13:00 A | 2018-10-03 17:00 A | 6 | 100% |  |  |
| 13 |  | 活动资源估算 | 0.5d? | 2018-10-02 13:00 A | 2018-10-02 17:00 A |  | 100% |  |  |
| 14 |  | 活动工期估算 | 0.5d? | 2018-10-02 13:00 A | 2018-10-02 17:00 A | 13FF | 100% |  |  |
| 15 |  | 制订进度计划 | 1d? | 2018-10-03 08:00 A | 2018-10-03 17:00 A | 14 | 100% |  |  |
| 16 |  | 项目成本计划 | 1d? | 2018-10-03 08:00 A | 2018-10-03 17:00 A | 12FF | 100% |  |  |
| 17 | 3 | **执行** | 44.4d? | 2018-10-04 08:00 A | 2018-12-05 11:13 | 5 | 42% | 0d |  |
| 18 | 3.1 | **需求分析调研** | 11.5d? | 2018-10-04 08:00 A | 2018-10-19 12:00 A |  | 100% |  |  |
| 19 |  | 行为需求分析 | 4d | 2018-10-04 08:00 A | 2018-10-09 17:00 A |  | 100% |  |  |
| 20 |  | 起草初步的需求文档 | 5d | 2018-10-04 08:00 A | 2018-10-10 17:00 A | 19SS | 100% |  |  |
| 21 |  | 功能性需求确认 | 1d? | 2018-10-11 08:00 A | 2018-10-11 17:00 A | 20 | 100% |  |  |
| 22 | 3.1.4 | **原型开发** | 2d? | 2018-10-12 08:00 A | 2018-10-15 17:00 A | 21 | 100% |  |  |
| 23 |  | 实例展示原型设计 | 1d? | 2018-10-12 08:00 A | 2018-10-12 17:00 A |  | 100% |  |  |
| 24 |  | 课程内容原型设计 | 1d | 2018-10-12 08:00 A | 2018-10-12 17:00 A | 23SS | 100% |  |  |
| 25 |  | 在线编译原型设计 | 1d | 2018-10-15 08:00 A | 2018-10-15 17:00 A | 24 | 100% |  |  |
| 26 |  | 个人中心原型设计 | 1d? | 2018-10-12 08:00 A | 2018-10-12 17:00 A | 23SS | 100% |  |  |
| 27 |  | 主页原型设计 | 1d? | 2018-10-12 08:00 A | 2018-10-12 17:00 A | 23SS | 100% |  |  |
| 28 |  | 非功能性需求分析 | 1d? | 2018-10-16 08:00 A | 2018-10-16 17:00 A | 22 | 100% |  |  |
| 29 |  | 审阅需求文档 | 1d? | 2018-10-17 08:00 A | 2018-10-17 17:00 A | 21, 28 | 100% |  |  |
| 30 |  | 根据反馈修改需求文档 | 2d | 2018-10-17 08:00 A | 2018-10-18 17:00 A | 29SS | 100% |  |  |
| 31 |  | 确定交付期限 | 0.5d | 2018-10-19 08:00 A | 2018-10-19 12:00 A | 30 | 100% |  | finish no earlier than 2018-10-16 17:00 |
| 32 |  | 获得所需资源 | 0.5d | 2018-10-19 08:00 A | 2018-10-19 12:00 A | 30 | 100% |  |  |
| 33 |  | 需求分析完成 | 0d | 2018-10-19 12:00 A | 2018-10-19 12:00 A | 32 | 100% |  |  |
| 34 | 3.2 | **设计** | 12d? | 2018-10-22 13:00 A | 2018-11-07 12:00 A | 18FS+1d | 100% |  |  |
| 35 | 3.2.1 | **概要设计** | 7d? | 2018-10-22 13:00 A | 2018-10-31 12:00 A |  | 100% |  |  |
| 36 | 3.2.1.1 | **系统结构设计** | 1d? | 2018-10-22 13:00 A | 2018-10-23 12:00 A | 33 | 100% |  |  |
| 37 |  | 系统逻辑架构设计 | 1d? | 2018-10-22 13:00 A | 2018-10-23 12:00 A |  | 100% |  |  |
| 38 |  | 系统物理架构设计 | 1d? | 2018-10-22 13:00 A | 2018-10-23 12:00 A | 37SS | 100% |  |  |
| 39 | 3.2.1.2 | **系统数据模型** | 3.5d? | 2018-10-22 13:00 A | 2018-10-25 17:00 A | 36SS | 100% |  |  |
| 40 |  | E-R模型设计 | 0.5d? | 2018-10-22 13:00 A | 2018-10-22 17:00 A |  | 100% |  |  |
| 41 |  | 数据字典 | 0.5d? | 2018-10-23 08:00 A | 2018-10-23 12:00 A | 40 | 100% |  |  |
| 42 |  | 数据库设计 | 1d? | 2018-10-23 13:00 A | 2018-10-24 12:00 A | 41 | 100% |  |  |
| 43 |  | 系统接口设计 | 0.5d? | 2018-10-23 08:00 A | 2018-10-23 12:00 A | 40 | 100% |  |  |
| 44 |  | 完善原型 | 3d | 2018-10-22 13:00 A | 2018-10-25 12:00 A | 18 | 100% |  |  |
| 45 |  | 用户界面设计 | 0.5d? | 2018-10-25 13:00 A | 2018-10-25 17:00 A | 44 | 100% |  |  |
| 46 | 3.2.1.3 | **非功能性设计** | 1.5d? | 2018-10-26 08:00 A | 2018-10-29 12:00 A | 39, 36 | 100% |  |  |
| 47 |  | 性能设计 | 0.5d | 2018-10-26 08:00 A | 2018-10-26 12:00 A |  | 100% |  |  |
| 48 |  | 可靠性设计 | 0.5d? | 2018-10-26 13:00 A | 2018-10-26 17:00 A | 47 | 100% |  |  |
| 49 |  | 可用性设计 | 0.5d? | 2018-10-29 08:00 A | 2018-10-29 12:00 A | 48 | 100% |  |  |
| 50 |  | 安全性设计 | 0.5d? | 2018-10-26 08:00 A | 2018-10-26 12:00 A | 47SS | 100% |  |  |
| 51 |  | 数据保密设计 | 0.5d? | 2018-10-26 13:00 A | 2018-10-26 17:00 A | 50 | 100% |  |  |
| 52 |  | 约束和假定 | 0.5d? | 2018-10-26 08:00 A | 2018-10-26 12:00 A | 46SS | 100% |  |  |
| 53 |  | 审阅概要设计 | 1d | 2018-10-29 13:00 A | 2018-10-30 12:00 A | 36, 39, 46, 52 | 100% |  |  |
| 54 |  | 根据反馈修改概要设计 | 1d? | 2018-10-29 13:00 A | 2018-10-30 12:00 A | 53SS | 100% |  |  |
| 55 |  | 概要设计完成 | 1d? | 2018-10-30 13:00 A | 2018-10-31 12:00 A | 54 | 100% |  |  |
| 56 | 3.2.2 | **详细设计** | 5d? | 2018-10-31 13:00 A | 2018-11-07 12:00 A | 55 | 100% |  |  |
| 57 |  | 制定功能规范 | 0.5d | 2018-10-31 13:00 A | 2018-10-31 17:00 A |  | 100% |  |  |
| 58 |  | 审阅功能规范 | 0.5d? | 2018-11-01 08:00 A | 2018-11-01 12:00 A | 57 | 100% |  |  |
| 59 |  | 根据反馈修改功能规范 | 0.5d? | 2018-11-01 08:00 A | 2018-11-01 12:00 A | 58SS | 100% |  |  |
| 60 |  | 制定系统编程规范约定 | 0.5d? | 2018-11-01 13:00 A | 2018-11-01 17:00 A | 59 | 100% |  |  |
| 61 |  | 审阅编程规范 | 0.5d? | 2018-11-02 08:00 A | 2018-11-02 12:00 A | 60 | 100% |  |  |
| 62 |  | 根据反馈修改编程规范 | 0.5d? | 2018-11-02 08:00 A | 2018-11-02 12:00 A | 61SS | 100% |  |  |
| 63 | 3.2.2.7 | **系统复用计划** | 0d? | 2018-11-04 08:00 A | 2018-11-04 17:00 A |  | 100% |  |  |
| 64 |  | 前端复用计划 | 1d | 2018-11-04 08:00 A | 2018-11-04 17:00 A |  | 100% |  |  |
| 65 |  | 后台复用计划 | 1d | 2018-11-04 08:00 A | 2018-11-04 17:00 A | 64SS | 100% |  |  |
| 66 | 3.2.2.8 | **系统接口设计** | 1d? | 2018-10-31 13:00 A | 2018-11-01 12:00 A |  | 100% |  |  |
| 67 |  | 内部接口详细设计 | 0.5d? | 2018-10-31 13:00 A | 2018-10-31 17:00 A |  | 100% |  |  |
| 68 |  | 外部接口详细设计 | 0.5d? | 2018-11-01 08:00 A | 2018-11-01 12:00 A | 67 | 100% |  |  |
| 69 | 3.2.2.9 | **对象模型设计** | 2d? | 2018-10-31 13:00 A | 2018-11-02 12:00 A |  | 100% |  |  |
| 70 |  | 对象模型图（类图） | 1d? | 2018-10-31 13:00 A | 2018-11-01 12:00 A |  | 100% |  |  |

| ID | WBS | Task | Duration | Start | Finish | Predecessors | Complete | Total float |
| --- | --- | --- | --- | --- | --- | --- | --- | --- |
| 71 |  | 对象描述 | 1d? | 2018-11-01 13:00 A | 2018-11-02 12:00 A | 70 | 100% |  |
| 72 | 3.2.2.10 | **用例详细设计** | 1d? | 2018-11-02 13:00 A | 2018-11-05 12:00 A | 71 | 100% |  |
| 73 |  | 系统顺序图设计 | 1d? | 2018-11-02 13:00 A | 2018-11-05 12:00 A |  | 100% |  |
| 74 |  | 系统状态图设计 | 1d? | 2018-11-02 13:00 A | 2018-11-05 12:00 A |  | 100% |  |
| 75 |  | 审阅详细设计 | 1d | 2018-11-05 13:00 A | 2018-11-06 12:00 A | 63, 43, 69, 72 | 100% |  |
| 76 |  | 根据反馈修改详细设计 | 1d? | 2018-11-05 13:00 A | 2018-11-06 12:00 A | 75SS | 100% |  |
| 77 |  | 详细设计完成 | 1d? | 2018-11-06 13:00 A | 2018-11-07 12:00 A | 76 | 100% |  |
| 78 |  | 设计工作完成 | 0d | 2018-11-07 12:00 A | 2018-11-07 12:00 A | 77 | 100% |  |
| 79 | 3.3 | **开发** | 16.9d? | 2018-10-23 13:00 A | 2018-11-15 11:13 | 18FS+2d | 8% | 0d |
| 80 |  | 审阅需求文档 | 0.5d | 2018-10-23 13:00 A | 2018-10-23 17:00 A |  | 100% |  |
| 81 |  | 制定开发计划 | 1d? | 2018-10-24 08:00 A | 2018-10-24 17:00 A | 80 | 100% |  |
| 82 |  | 分派任务给开发人员 | 1d | 2018-10-25 08:00 A | 2018-10-26 11:13 A | 81 | 100% |  |
| 83 | 3.3.4 | **知识学习** | 5d | 2018-10-26 11:13 | 2018-11-02 11:13 | 82 |  | 8d |
| 84 |  | 前端知识学习 | 3d | 2018-10-26 11:13 | 2018-10-31 11:13 |  |  | 8d |
| 85 |  | 后端知识学习 | 5d | 2018-10-26 11:13 | 2018-11-02 11:13 | 84SS |  | 8d |
| 86 |  | demo搭建 | 1d? | 2018-11-02 11:13 | 2018-11-05 11:13 | 83 |  | 8d |
| 87 | 3.3.6 | **编写代码** | 9d? | 2018-11-02 11:13 | 2018-11-15 11:13 | 82FS+5d |  | 0d |
| 88 | 3.3.6.1 | **前端代码编写** | 3d? | 2018-11-02 11:13 | 2018-11-07 11:13 |  |  | 6d |
| 89 |  | 主页编码 | 0.5d | 2018-11-02 11:13 | 2018-11-02 16:13 |  |  | 6d |
| 90 |  | 注册登录页编码 | 1d? | 2018-11-02 16:13 | 2018-11-05 16:13 | 89 |  | 6d |
| 91 |  | 留言板页编码 | 0.5d? | 2018-11-05 16:13 | 2018-11-06 11:13 | 90 |  | 6d |
| 92 |  | 课程页编码 | 1d? | 2018-11-06 11:13 | 2018-11-07 11:13 | 91 |  | 6d |
| 93 |  | 管理员页编码 | 2d | 2018-11-02 11:13 | 2018-11-06 11:13 | 89SS |  | 7d |
| 94 |  | 个人中心页编码 | 2d | 2018-11-02 11:13 | 2018-11-06 11:13 | 89SS |  | 7d |
| 95 | 3.3.6.2 | **后端代码编写** | 3d? | 2018-11-09 11:13 | 2018-11-14 11:13 | 88SS+5d |  | 1d |
| 96 |  | 接口实现 | 1d? | 2018-11-09 11:13 | 2018-11-12 11:13 |  |  | 1d |
| 97 |  | 注册登录注销业务编码 | 1d? | 2018-11-12 11:13 | 2018-11-13 11:13 | 96 |  | 1d |
| 98 |  | 留言板业务编码 | 1d? | 2018-11-13 11:13 | 2018-11-14 11:13 | 97 |  | 1d |
| 99 |  | 课程业务编码 | 1d? | 2018-11-12 11:13 | 2018-11-13 11:13 | 96 |  | 1d |
| 100 |  | 课程管理业务编码 | 1d? | 2018-11-13 11:13 | 2018-11-14 11:13 | 99 |  | 1d |
| 101 |  | 数据库搭建 | 3d | 2018-11-12 11:13 | 2018-11-15 11:13 | 88SS+6d |  | 0d |
| 102 | 3.3.7 | **开发人员测试(初步调试)** | 8d | 2018-11-02 11:13 | 2018-11-14 11:13 | 87SS |  | 1d |
| 103 |  | 前端代码测试 | 3d | 2018-11-02 11:13 | 2018-11-07 11:13 | 88FF |  | 6d |
| 104 |  | 后台代码测试 | 3d | 2018-11-09 11:13 | 2018-11-14 11:13 | 95FF |  | 1d |
| 105 |  | 开发工作完毕 | 0d | 2018-11-15 11:13 | 2018-11-15 11:13 | 88, 95, 101 |  | 0d |
| 106 | 3.4 | **测试** | 13d | 2018-11-15 11:13 | 2018-12-04 11:13 | 79 |  | 0d |
| 107 |  | 制定单元测试计划 | 1d | 2018-11-15 11:13 | 2018-11-16 11:13 |  |  | 0d |
| 108 |  | 制定整体测试计划 | 1d | 2018-11-16 11:13 | 2018-11-19 11:13 | 107 |  | 12d |
| 109 | 3.4.3 | **单元测试** | 6d | 2018-11-20 11:13 | 2018-11-28 11:13 | 107FS+2d |  | 0d |
| 110 | 3.4.3.1 | **审阅模块化代码** | 3d | 2018-11-20 11:13 | 2018-11-23 11:13 |  |  | 3d |
| 111 |  | 审阅前端代码 | 3d | 2018-11-20 11:13 | 2018-11-23 11:13 |  |  | 3d |
| 112 |  | 审阅后台代码 | 3d | 2018-11-20 11:13 | 2018-11-23 11:13 | 111SS |  | 3d |
| 113 |  | 测试组件模块是否符合产品规范 | 4d | 2018-11-20 11:13 | 2018-11-26 11:13 | 110SS |  | 0d |
| 114 |  | 找出不符合规范的异常情况 | 4d | 2018-11-20 11:13 | 2018-11-26 11:13 | 113SS |  | 0d |
| 115 |  | 修改代码 | 3d | 2018-11-21 11:13 | 2018-11-26 11:13 | 114FF |  | 0d |
| 116 |  | 重新测试经过修改的代码 | 2d | 2018-11-26 11:13 | 2018-11-28 11:13 | 115 |  | 0d |
| 117 |  | 单元测试完成 | 0d | 2018-11-28 11:13 | 2018-11-28 11:13 | 116 |  | 0d |
| 118 | 3.4.4 | **整体测试** | 4d | 2018-11-28 11:13 | 2018-12-04 11:13 | 109 |  | 0d |
| 119 |  | 测试模块集成情况 | 2d | 2018-11-28 11:13 | 2018-11-30 11:13 |  |  | 0d |
| 120 |  | 找出不符合规范的异常情况 | 3d | 2018-11-28 11:13 | 2018-12-03 11:13 | 119SS |  | 0d |
| 121 |  | 修改代码 | 3d | 2018-11-28 11:13 | 2018-12-03 11:13 | 120FF |  | 0d |
| 122 |  | 重新测试经过修改的代码 | 1d | 2018-12-03 11:13 | 2018-12-04 11:13 | 121 |  | 0d |
| 123 |  | 整体测试完成 | 0d | 2018-12-04 11:13 | 2018-12-04 11:13 | 122 |  | 0d |
| 124 | 3.5 | **试生产** | 14d? | 2018-11-15 11:13 | 2018-12-05 11:13 | 105 |  | 0d |
| 125 |  | 确定测试群体 | 0.5d | 2018-11-15 11:13 | 2018-11-15 16:13 |  |  | 12.5d |
| 126 |  | 获得用户反馈 | 4h? | 2018-12-04 11:13 | 2018-12-04 16:13 | 125, 123 |  | 0d |
| 127 |  | 评估测试信息 | 0.5d | 2018-12-04 16:13 | 2018-12-05 11:13 | 126 |  | 0d |
| 128 |  | 试生产工作完成 | 0d | 2018-12-05 11:13 | 2018-12-05 11:13 | 127 |  | 0d |
| 129 | 3.6 | **部署** | 17d | 2018-10-26 11:13 | 2018-11-20 11:13 | 82 |  | 11d |
| 130 |  | 确定部署策略 | 1d | 2018-10-26 11:13 | 2018-10-29 11:13 |  |  | 11d |
| 131 |  | 确定部署方法 | 1d | 2018-10-29 11:13 | 2018-10-30 11:13 | 130 |  | 11d |
| 132 |  | 获得部署所需资源 | 1d | 2018-11-01 11:13 | 2018-11-02 11:13 | 131FS+2d |  | 11d |
| 133 |  | 培训技术支持人员 | 2d | 2018-11-09 11:13 | 2018-11-13 11:13 | 132FS+5d |  | 11d |
| 134 |  | 部署软件 | 3d | 2018-11-15 11:13 | 2018-11-20 11:13 | 133FS+2d |  | 11d |
| 135 |  | 部署工作完成 | 0d | 2018-11-20 11:13 | 2018-11-20 11:13 | 134 |  | 11d |
| 136 | 4 | **监控** | 49d? | 2018-09-27 08:00 A | 2018-12-04 17:00 |  | 16% | 0d |
| 137 |  | 周会1 | 2h | 2018-09-27 08:00 A | 2018-09-27 10:00 A |  | 100% |  |
| 138 |  | 短谈1 | 0.25h | 2018-10-09 08:00 A | 2018-10-09 08:15 A |  | 100% |  |
| 139 |  | 周会2 | 2h | 2018-10-11 08:00 A | 2018-10-11 10:00 A |  | 100% |  |
| 140 |  | 短谈2 | 0.25h | 2018-10-16 08:00 A | 2018-10-16 08:15 A |  | 100% |  |

| ID | WBS | Task | Duration | Start | Finish | Predecessors | Complete | Total float |
| --- | --- | --- | --- | --- | --- | --- | --- | --- |
| 141 |  | 周会3 | 2h | 2018-10-18 08:00 A | 2018-10-18 10:00 A |  | 100% |  |
| 142 |  | 短谈3 | 0.25h | 2018-10-23 08:00 A | 2018-10-23 08:15 A |  | 100% |  |
| 143 |  | 周会4 | 2h | 2018-10-25 08:00 A | 2018-10-25 10:00 A |  | 100% |  |
| 144 |  | 短谈4 | 0.25h | 2018-10-30 08:00 A | 2018-10-30 08:15 A |  | 100% |  |
| 145 |  | 周会5 | 2h | 2018-11-01 08:00 A | 2018-11-01 10:00 A |  | 100% |  |
| 146 |  | 短谈5 | 0.25h | 2018-11-06 08:00 A | 2018-11-06 08:15 A |  | 100% |  |
| 147 |  | 周会6 | 2h | 2018-11-08 08:00 | 2018-11-08 10:00 |  |  |  |
| 148 |  | 短谈6 | 1d? | 2018-11-13 08:00 | 2018-11-13 17:00 |  |  |  |
| 149 |  | 周会7 | 1d? | 2018-11-15 08:00 | 2018-11-15 17:00 |  |  |  |
| 150 |  | 短会7 | 1d? | 2018-11-20 08:00 | 2018-11-20 17:00 |  |  |  |
| 151 |  | 周会8 | 1d? | 2018-11-22 08:00 | 2018-11-22 17:00 |  |  |  |
| 152 |  | 短会8 | 1d? | 2018-11-27 08:00 | 2018-11-27 17:00 |  |  |  |
| 153 |  | 周会9 | 1d? | 2018-11-29 08:00 | 2018-11-29 17:00 |  |  |  |
| 154 |  | 短会9 | 1d? | 2018-12-04 08:00 | 2018-12-04 17:00 |  |  |  |
| 155 | 5 | **收尾** | 16.5d? | 2018-11-15 11:13 | 2018-12-07 16:13 | 124SS |  | 0d |
| 156 | 5.1 | **文档** | 12d? | 2018-11-15 11:13 | 2018-12-03 11:13 |  |  | 2d |
| 157 |  | 制定“帮助”规范计划 | 0.5d? | 2018-11-15 11:13 | 2018-11-15 16:13 |  |  | 2d |
| 158 |  | 编写“帮助”文档 | 1d | 2018-11-15 16:13 | 2018-11-16 16:13 | 157 |  | 2d |
| 159 |  | 开发“帮助”系统 | 3d | 2018-11-16 16:13 | 2018-11-21 16:13 | 158 |  | 9.5d |
| 160 |  | 审阅“帮助”文档 | 0.5d? | 2018-11-16 16:13 | 2018-11-19 11:13 | 158 |  | 2d |
| 161 |  | 根据反馈修改“帮助”文档 | 1d? | 2018-11-26 11:13 | 2018-11-27 11:13 | 160FS+5d |  | 2d |
| 162 |  | 制定用户手册规范 | 0.5d? | 2018-11-27 11:13 | 2018-11-27 16:13 | 161 |  | 2d |
| 163 |  | 编写用户手册 | 1d | 2018-11-27 16:13 | 2018-11-28 16:13 | 162 |  | 2d |
| 164 |  | 审阅所有的用户文档 | 0.5d? | 2018-11-28 16:13 | 2018-11-29 11:13 | 163 |  | 2d |
| 165 |  | 根据反馈修改用户文档 | 1d? | 2018-11-29 11:13 | 2018-11-30 11:13 | 164 |  | 2d |
| 166 |  | 文档整理完成 | 1d? | 2018-11-30 11:13 | 2018-12-03 11:13 | 165 |  | 2d |
| 167 | 5.2 | **总结经验教训** | 2.5d? | 2018-12-05 11:13 | 2018-12-07 16:13 | 17, 156 |  | 0d |
| 168 |  | 将经验教训记录存档 | 1d? | 2018-12-05 11:13 | 2018-12-06 11:13 |  |  | 0d |
| 169 |  | 分发给工作组成员 | 0.5d? | 2018-12-06 11:13 | 2018-12-06 16:13 | 168 |  | 0d |
| 170 |  | 回顾完成 | 1d? | 2018-12-06 16:13 | 2018-12-07 16:13 | 169 |  | 0d |

## Version 2 (saved 2018-11-22, file 项目综合管理计划v3.1.mpp)

Note of the change: XStrachey 整理“”

Last finish 2018-12-07 → 2018-12-06 (-1d). Complete tasks 74 → 73.

Added:

| ID | Task | Duration | Start | Finish | Predecessors | Resources |
| --- | --- | --- | --- | --- | --- | --- |
| 21 | 在线编译功能分析 | 0.5d? | 2018-09-28 08:00 A | 2018-09-28 12:00 A |  | 谢旻珊 |
| 22 | 每日学习时长功能分析 | 1d? | 2018-09-30 08:00 A | 2018-09-30 17:00 A | 21SS | 谢珮爽 |
| 23 | 实例展示功能分析 | 1d? | 2018-10-01 08:00 A | 2018-10-01 17:00 A | 21SS | 卢彦谚 |
| 24 | 留言板功能分析 | 1d? | 2018-10-03 08:00 A | 2018-10-03 17:00 A | 21SS | 吴志祥 |
| 25 | 课程选择功能分析 | 1d? | 2018-10-03 08:00 A | 2018-10-03 17:00 A | 21SS | 吴潘安 |

Changed:

| ID | Task | Start | Finish | Duration | Complete | Total float | Predecessors | Other |
| --- | --- | --- | --- | --- | --- | --- | --- | --- |
| 1 | **启动** | 2018-09-26 08:00 A → 2018-09-27 08:00 A (+1d) | 2018-09-27 12:00 A → 2018-10-18 12:00 A (+21d) | 1.5d? → 15.5d? |  |  |  | baseline start none → 2018-09-26 08:00; baseline finish none → 2018-10-18 12:00 |
| 2 | 可行性分析 | 2018-09-26 08:00 A → 2018-10-08 08:00 A (+12d) | 2018-09-26 12:00 A → 2018-10-08 12:00 A (+12d) |  |  |  |  | baseline start none → 2018-09-26 08:00; baseline finish none → 2018-09-26 12:00 |
| 3 | 项目干系人识别 | 2018-09-26 13:00 A → 2018-09-27 08:00 A (+1d) | 2018-09-26 17:00 A → 2018-09-27 12:00 A (+1d) |  |  |  |  | baseline start none → 2018-09-27 08:00; baseline finish none → 2018-09-27 12:00 |
| 4 | 制订项目章程 | 2018-09-27 08:00 A → 2018-10-18 08:00 A (+21d) | 2018-09-27 12:00 A → 2018-10-18 12:00 A (+21d) |  |  |  |  | baseline start none → 2018-10-10 08:00; baseline finish none → 2018-10-11 17:00 |
| 5 | **计划** | 2018-09-26 08:00 A → 2018-09-27 08:00 A (+1d) | 2018-10-03 17:00 A → 2018-10-02 12:00 (-1d) | 6d? → 3.5d? | 100% → 55% | none → -0.38d | none → 1FS-15d | baseline start none → 2018-09-27 08:00; baseline finish none → 2018-10-02 12:00 |
| 6 | **项目范围计划** | 2018-09-26 08:00 A → 2018-09-27 08:00 A (+1d) | 2018-10-02 12:00 A → 2018-10-02 12:00 | 4.5d → 3.5d | 100% → 33% | none → -3d | none → 4FS-15d | baseline start none → 2018-09-27 08:00; baseline finish none → 2018-10-02 12:00 |
| 7 | 分析项目范围、目标描述 | 2018-09-26 08:00 A → 2018-09-27 08:00 A (+1d) | 2018-09-26 12:00 A → 2018-09-27 12:00 A (+1d) |  |  |  |  | baseline start none → 2018-09-27 08:00; baseline finish none → 2018-09-27 12:00 |
| 8 | 定义预备资源 | 2018-09-26 13:00 A → 2018-09-27 08:00 A (+1d) | 2018-09-26 17:00 A → 2018-09-27 12:00 A (+1d) |  |  |  |  | baseline start none → 2018-09-28 08:00; baseline finish none → 2018-09-28 17:00 |
| 9 | 获得核心资源 |  |  |  |  |  |  | baseline start none → 2018-09-28 08:00; baseline finish none → 2018-09-28 17:00 |
| 10 | 确定项目范围规划 | 2018-09-27 13:00 A → 2018-09-27 13:00 | 2018-10-02 12:00 A → 2018-10-02 12:00 |  | 100% → 0% | none → -3.5d |  | resources none → 吴志祥; baseline start none → 2018-09-27 13:00; baseline finish none → 2018-10-02 12:00 |
| 11 | 工作分解结构（WBS） | 2018-10-02 13:00 A → 2018-09-28 08:00 A (-4d) | 2018-10-03 12:00 A → 2018-09-28 17:00 A (-5d) |  |  |  |  | baseline start none → 2018-09-30 08:00; baseline finish none → 2018-09-30 17:00 |
| 12 | **项目时间表计划** | 2018-10-02 13:00 A → 2018-09-28 08:00 A (-4d) | 2018-10-03 17:00 A → 2018-09-30 12:00 A (-3d) | 1.5d? → 1d? |  |  |  | baseline start none → 2018-09-28 08:00; baseline finish none → 2018-09-30 12:00 |
| 13 | 活动资源估算 | 2018-10-02 13:00 A → 2018-09-28 08:00 A (-4d) | 2018-10-02 17:00 A → 2018-09-28 10:00 A (-4d) | 0.5d? → 2h? |  |  |  | baseline start none → 2018-10-04 08:00; baseline finish none → 2018-10-04 17:00 |
| 14 | 活动工期估算 | 2018-10-02 13:00 A → 2018-09-29 08:00 A (-3d) | 2018-10-02 17:00 A → 2018-09-29 10:00 A (-3d) | 0.5d? → 0.25d? |  |  |  | baseline start none → 2018-10-04 08:00; baseline finish none → 2018-10-04 17:00 |
| 15 | 制订进度计划 | 2018-10-03 08:00 A → 2018-09-30 08:00 A (-3d) | 2018-10-03 17:00 A → 2018-09-30 12:00 A (-3d) | 1d? → 0.5d? |  |  |  | baseline start none → 2018-10-04 08:00; baseline finish none → 2018-10-05 17:00 |
| 16 | 项目成本计划 | 2018-10-03 08:00 A → 2018-10-02 08:00 A (-1d) | 2018-10-03 17:00 A → 2018-10-02 09:00 A (-1d) | 1d? → 0.12d? |  |  |  | baseline start none → 2018-10-04 08:00; baseline finish none → 2018-10-05 17:00 |
| 17 | **执行** | 2018-10-04 08:00 A → 2018-09-27 08:00 A (-7d) | 2018-12-05 11:13 → 2018-12-03 17:00 (-2d) | 44.4d? → 48d? |  |  |  | baseline start none → 2018-09-27 08:00; baseline finish none → 2018-11-30 16:13 |
| 18 | **需求分析调研** | 2018-10-04 08:00 A → 2018-09-27 08:00 A (-7d) | 2018-10-19 12:00 A → 2018-10-18 12:00 (-1d) | 11.5d? → 15.5d? | 100% → 99% | none → 0d | none → 16 | baseline start none → 2018-09-27 08:00; baseline finish none → 2018-10-16 17:00 |
| 19 | 行为需求分析 | 2018-10-04 08:00 A → 2018-09-27 08:00 A (-7d) | 2018-10-09 17:00 A → 2018-09-27 17:00 A (-12d) | 4d → 1d |  |  |  | baseline start none → 2018-09-27 08:00; baseline finish none → 2018-09-30 17:00 |
| 20 | **起草初步的需求文档** | 2018-10-04 08:00 A → 2018-09-28 08:00 A (-6d) | 2018-10-10 17:00 A → 2018-10-03 17:00 A (-7d) | 5d → 4d? |  |  | 19SS → 19 | resources 谢哲威; 卢彦谚; 吴潘安; 吴志祥; 谢旻珊; 谢珮爽 → none; baseline start none → 2018-09-28 08:00; baseline finish none → 2018-10-03 17:00 |
| 26 | 功能性需求确认 | 2018-10-11 08:00 A → 2018-10-04 08:00 A (-7d) | 2018-10-11 17:00 A → 2018-10-04 17:00 A (-7d) |  |  |  |  | baseline start none → 2018-09-28 08:00; baseline finish none → 2018-10-05 17:00 |
| 27 | **原型开发** | 2018-10-12 08:00 A → 2018-09-28 08:00 A (-14d) | 2018-10-15 17:00 A → 2018-10-10 17:00 A (-5d) | 2d? → 9d? |  |  |  | baseline start none → 2018-09-30 08:00; baseline finish none → 2018-10-05 17:00 |
| 28 | 实例展示原型设计 | 2018-10-12 08:00 A → 2018-09-30 08:00 A (-12d) | 2018-10-12 17:00 A → 2018-09-30 17:00 A (-12d) |  |  |  |  | baseline start none → 2018-10-02 08:00; baseline finish none → 2018-10-07 17:00 |
| 29 | 课程内容原型设计 | 2018-10-12 08:00 A → 2018-09-30 08:00 A (-12d) | 2018-10-12 17:00 A → 2018-09-30 17:00 A (-12d) |  |  |  |  | baseline start none → 2018-10-02 08:00; baseline finish none → 2018-10-07 17:00 |
| 30 | 在线编译原型设计 | 2018-10-15 08:00 A → 2018-09-28 08:00 A (-17d) | 2018-10-15 17:00 A → 2018-09-28 17:00 A (-17d) |  |  |  |  | baseline start none → 2018-10-02 08:00; baseline finish none → 2018-10-07 17:00 |
| 31 | 个人中心原型设计 | 2018-10-12 08:00 A → 2018-10-05 08:00 A (-7d) | 2018-10-12 17:00 A → 2018-10-07 17:00 A (-5d) | 1d? → 2d |  |  |  | baseline start none → 2018-10-02 08:00; baseline finish none → 2018-10-07 17:00 |
| 32 | 主页原型设计 | 2018-10-12 08:00 A → 2018-10-09 08:00 A (-3d) | 2018-10-12 17:00 A → 2018-10-10 17:00 A (-2d) | 1d? → 2d? |  |  |  | baseline start none → 2018-10-02 08:00; baseline finish none → 2018-10-07 17:00 |
| 33 | 非功能性需求分析 | 2018-10-16 08:00 A → 2018-10-14 08:00 A (-2d) | 2018-10-16 17:00 A → 2018-10-14 17:00 A (-2d) | 1d? → 1d |  |  |  | baseline start none → 2018-10-08 08:00; baseline finish none → 2018-10-08 17:00 |
| 34 | 审阅需求文档 | 2018-10-17 08:00 A → 2018-10-15 08:00 A (-2d) | 2018-10-17 17:00 A → 2018-10-15 12:00 A (-2d) | 1d? → 4h? |  |  |  | baseline start none → 2018-10-09 08:00; baseline finish none → 2018-10-09 17:00 |
| 35 | 根据反馈修改需求文档 | 2018-10-17 08:00 A → 2018-10-15 08:00 A (-2d) | 2018-10-18 17:00 A → 2018-10-16 17:00 A (-2d) |  |  |  |  | baseline start none → 2018-10-09 08:00; baseline finish none → 2018-10-10 17:00 |
| 36 | 确定交付期限 | 2018-10-19 08:00 A → 2018-10-16 08:00 A (-3d) | 2018-10-19 12:00 A → 2018-10-16 17:00 A (-3d) |  |  |  |  | baseline start none → 2018-10-16 13:00; baseline finish none → 2018-10-16 17:00 |
| 37 | 获得所需资源 | 2018-10-19 08:00 A → 2018-10-18 08:00 A (-1d) | 2018-10-19 12:00 A → 2018-10-18 12:00 A (-1d) |  |  |  |  | baseline start none → 2018-10-11 08:00; baseline finish none → 2018-10-11 12:00 |
| 38 | 需求分析完成 | 2018-10-19 12:00 A → 2018-10-18 12:00 (-1d) | 2018-10-19 12:00 A → 2018-10-18 12:00 (-1d) |  | 100% → 0% | none → -4.5d |  | baseline start none → 2018-10-11 12:00; baseline finish none → 2018-10-11 12:00 |
| 39 | **设计** | 2018-10-22 13:00 A → 2018-10-19 08:00 A (-3d) | 2018-11-07 12:00 A → 2018-11-09 17:00 (+2d) | 12d? → 16d? | 100% → 88% | none → 16d |  | baseline start none → 2018-10-18 08:00; baseline finish none → 2018-11-06 17:00 |
| 40 | **概要设计** | 2018-10-22 13:00 A → 2018-10-19 08:00 A (-3d) | 2018-10-31 12:00 A → 2018-10-29 17:00 (-2d) |  | 100% → 94% | none → -1d | none → 38FS+1d | baseline start none → 2018-10-18 08:00; baseline finish none → 2018-10-26 17:00 |
| 41 | **系统结构设计** | 2018-10-22 13:00 A → 2018-10-21 08:00 A (-1d) | 2018-10-23 12:00 A → 2018-10-22 12:00 A (-1d) | 1d? → 0.5d? |  |  |  | baseline start none → 2018-10-18 08:00; baseline finish none → 2018-10-18 17:00 |
| 42 | 系统逻辑架构设计 | 2018-10-22 13:00 A → 2018-10-21 08:00 A (-1d) | 2018-10-23 12:00 A → 2018-10-21 12:00 A (-2d) | 1d? → 4h? |  |  |  | baseline start none → 2018-10-18 08:00; baseline finish none → 2018-10-18 17:00 |
| 43 | 系统物理架构设计 | 2018-10-22 13:00 A → 2018-10-22 08:00 A | 2018-10-23 12:00 A → 2018-10-22 12:00 A (-1d) | 1d? → 4h? |  |  |  | baseline start none → 2018-10-18 08:00; baseline finish none → 2018-10-18 17:00 |
| 44 | **系统数据模型** | 2018-10-22 13:00 A → 2018-10-21 08:00 A (-1d) | 2018-10-25 17:00 A → 2018-10-24 17:00 A (-1d) | 3.5d? → 3d? |  |  |  | baseline start none → 2018-10-18 08:00; baseline finish none → 2018-10-23 12:00 |
| 45 | E-R模型设计 | 2018-10-22 13:00 A → 2018-10-22 08:00 A |  | 0.5d? → 1d? |  |  |  | baseline start none → 2018-10-18 08:00; baseline finish none → 2018-10-18 12:00 |
| 46 | 数据字典 |  | 2018-10-23 12:00 A → 2018-10-23 17:00 A | 0.5d? → 1d? |  |  |  | baseline start none → 2018-10-18 13:00; baseline finish none → 2018-10-18 17:00 |
| 47 | 数据库设计 | 2018-10-23 13:00 A → 2018-10-23 08:00 A | 2018-10-24 12:00 A → 2018-10-23 17:00 A (-1d) |  |  |  |  | baseline start none → 2018-10-19 08:00; baseline finish none → 2018-10-19 17:00 |
| 48 | 系统接口设计 | 2018-10-23 08:00 A → 2018-10-21 08:00 A (-2d) | 2018-10-23 12:00 A → 2018-10-21 17:00 A (-2d) | 0.5d? → 1d |  |  |  | baseline start none → 2018-10-18 13:00; baseline finish none → 2018-10-18 17:00 |
| 49 | 完善原型 | 2018-10-22 13:00 A → 2018-10-21 08:00 A (-1d) | 2018-10-25 12:00 A → 2018-10-24 17:00 A (-1d) | 3d → 4d |  |  |  | baseline start none → 2018-10-18 08:00; baseline finish none → 2018-10-22 17:00 |
| 50 | 用户界面设计 | 2018-10-25 13:00 A → 2018-10-23 08:00 A (-2d) | 2018-10-25 17:00 A → 2018-10-23 17:00 A (-2d) | 0.5d? → 1d? |  |  |  | baseline start none → 2018-10-23 08:00; baseline finish none → 2018-10-23 12:00 |
| 51 | **非功能性设计** | 2018-10-26 08:00 A → 2018-10-19 08:00 A (-7d) | 2018-10-29 12:00 A → 2018-10-23 09:00 A (-6d) | 1.5d? → 2.12d? |  |  |  | baseline start none → 2018-10-23 13:00; baseline finish none → 2018-10-24 17:00 |
| 52 | 性能设计 | 2018-10-26 08:00 A → 2018-10-23 08:00 A (-3d) | 2018-10-26 12:00 A → 2018-10-23 09:00 A (-3d) | 0.5d → 0.12d |  |  |  | baseline start none → 2018-10-23 13:00; baseline finish none → 2018-10-23 17:00 |
| 53 | 可靠性设计 | 2018-10-26 13:00 A → 2018-10-23 08:00 A (-3d) | 2018-10-26 17:00 A → 2018-10-23 09:00 A (-3d) | 0.5d? → 0.12d? |  |  |  | baseline start none → 2018-10-24 08:00; baseline finish none → 2018-10-24 12:00 |
| 54 | 可用性设计 | 2018-10-29 08:00 A → 2018-10-23 08:00 A (-6d) | 2018-10-29 12:00 A → 2018-10-23 09:00 A (-6d) | 0.5d? → 0.12d? |  |  |  | baseline start none → 2018-10-24 13:00; baseline finish none → 2018-10-24 17:00 |
| 55 | 安全性设计 | 2018-10-26 08:00 A → 2018-10-19 08:00 A (-7d) | 2018-10-26 12:00 A → 2018-10-19 17:00 A (-7d) | 0.5d? → 1d |  |  |  | baseline start none → 2018-10-23 13:00; baseline finish none → 2018-10-23 17:00 |
| 56 | 数据保密设计 | 2018-10-26 13:00 A → 2018-10-19 08:00 A (-7d) | 2018-10-26 17:00 A → 2018-10-19 17:00 A (-7d) | 0.5d? → 1d |  |  |  | baseline start none → 2018-10-24 08:00; baseline finish none → 2018-10-24 12:00 |
| 57 | 约束和假定 | 2018-10-26 08:00 A → 2018-10-22 08:00 A (-4d) | 2018-10-26 12:00 A → 2018-10-22 17:00 A (-4d) | 0.5d? → 1d? |  |  |  | baseline start none → 2018-10-23 13:00; baseline finish none → 2018-10-23 17:00 |
| 58 | 审阅概要设计 | 2018-10-29 13:00 A → 2018-10-25 08:00 A (-4d) | 2018-10-30 12:00 A → 2018-10-25 12:00 A (-5d) | 1d → 0.5d |  |  |  | baseline start none → 2018-10-25 08:00; baseline finish none → 2018-10-25 17:00 |
| 59 | 根据反馈修改概要设计 | 2018-10-29 13:00 A → 2018-10-25 08:00 A (-4d) | 2018-10-30 12:00 A → 2018-10-26 17:00 A (-4d) | 1d? → 2d? |  |  |  | baseline start none → 2018-10-25 08:00; baseline finish none → 2018-10-25 17:00 |
| 60 | 概要设计完成 | 2018-10-30 13:00 A → 2018-10-29 08:00 (-1d) | 2018-10-31 12:00 A → 2018-10-29 17:00 (-2d) |  | 100% → 0% | none → -6d |  | baseline start none → 2018-10-26 08:00; baseline finish none → 2018-10-26 17:00 |
| 61 | **详细设计** | 2018-10-31 13:00 A → 2018-10-20 08:00 A (-11d) | 2018-11-07 12:00 A → 2018-11-09 17:00 (+2d) | 5d? → 15d? | 100% → 81% | none → 16d |  | baseline start none → 2018-10-29 08:00; baseline finish none → 2018-11-06 17:00 |
| 62 | 制定功能规范 | 2018-10-31 13:00 A → 2018-10-30 08:00 (-1d) | 2018-10-31 17:00 A → 2018-10-30 12:00 (-1d) |  | 100% → 0% | none → 24d |  | baseline start none → 2018-10-29 08:00; baseline finish none → 2018-10-29 12:00 |
| 63 | 审阅功能规范 | 2018-11-01 08:00 A → 2018-10-30 13:00 (-2d) | 2018-11-01 12:00 A → 2018-10-30 17:00 (-2d) |  | 100% → 0% | none → 24d |  | baseline start none → 2018-10-29 13:00; baseline finish none → 2018-10-29 17:00 |
| 64 | 根据反馈修改功能规范 | 2018-11-01 08:00 A → 2018-10-30 13:00 (-2d) | 2018-11-01 12:00 A → 2018-10-30 17:00 (-2d) |  | 100% → 0% | none → 24d |  | baseline start none → 2018-10-29 13:00; baseline finish none → 2018-10-29 17:00 |
| 65 | 制定系统编程规范约定 | 2018-11-01 13:00 A → 2018-10-20 08:00 A (-12d) | 2018-11-01 17:00 A → 2018-10-20 17:00 A (-12d) | 0.5d? → 1d |  |  |  | baseline start none → 2018-10-30 08:00; baseline finish none → 2018-10-30 12:00 |
| 66 | 审阅编程规范 | 2018-11-02 08:00 A → 2018-10-20 08:00 A (-13d) | 2018-11-02 12:00 A → 2018-10-20 17:00 A (-13d) | 0.5d? → 1d |  |  |  | baseline start none → 2018-10-30 13:00; baseline finish none → 2018-10-30 17:00 |
| 67 | 根据反馈修改编程规范 | 2018-11-02 08:00 A → 2018-10-20 08:00 A (-13d) | 2018-11-02 12:00 A → 2018-10-20 17:00 A (-13d) | 0.5d? → 1d |  |  |  | baseline start none → 2018-10-30 13:00; baseline finish none → 2018-10-30 17:00 |
| 68 | **系统复用计划** | 2018-11-04 08:00 A → 2018-11-06 08:00 A (+2d) | 2018-11-04 17:00 A → 2018-11-06 12:00 A (+2d) | 0d? → 0.5d |  |  |  | baseline start none → 2018-11-04 08:00; baseline finish none → 2018-11-04 17:00 |
| 69 | 前端复用计划 | 2018-11-04 08:00 A → 2018-11-06 08:00 A (+2d) | 2018-11-04 17:00 A → 2018-11-06 12:00 A (+2d) | 1d → 0.5d |  |  |  | baseline start none → 2018-11-04 08:00; baseline finish none → 2018-11-04 17:00 |
| 70 | 后台复用计划 | 2018-11-04 08:00 A → 2018-11-06 08:00 A (+2d) | 2018-11-04 17:00 A → 2018-11-06 12:00 A (+2d) | 1d → 0.5d |  |  |  | baseline start none → 2018-11-04 08:00; baseline finish none → 2018-11-04 17:00 |
| 71 | **系统接口设计** | 2018-10-31 13:00 A → 2018-11-04 08:00 A (+4d) | 2018-11-01 12:00 A → 2018-11-05 17:00 A (+4d) |  |  |  |  | resources 吴潘安 → none; baseline start none → 2018-10-29 08:00; baseline finish none → 2018-10-29 17:00 |
| 72 | 内部接口详细设计 | 2018-10-31 13:00 A → 2018-11-04 08:00 A (+4d) | 2018-10-31 17:00 A → 2018-11-04 17:00 A (+4d) | 0.5d? → 1d |  |  |  | baseline start none → 2018-10-29 08:00; baseline finish none → 2018-10-29 12:00 |
| 73 | 外部接口详细设计 | 2018-11-01 08:00 A → 2018-11-05 08:00 A (+4d) | 2018-11-01 12:00 A → 2018-11-05 17:00 A (+4d) | 0.5d? → 1d |  |  |  | baseline start none → 2018-10-29 13:00; baseline finish none → 2018-10-29 17:00 |
| 74 | **对象模型设计** | 2018-10-31 13:00 A → 2018-10-31 08:00 A | 2018-11-02 12:00 A → 2018-11-03 17:00 A (+1d) | 2d? → 3d? |  |  |  | resources 吴潘安; 卢彦谚 → none; baseline start none → 2018-10-29 08:00; baseline finish none → 2018-10-30 17:00 |
| 75 | 对象模型图（类图） | 2018-10-31 13:00 A → 2018-10-31 08:00 A | 2018-11-01 12:00 A → 2018-10-31 17:00 A (-1d) |  |  |  |  | baseline start none → 2018-10-29 08:00; baseline finish none → 2018-10-29 17:00 |

| ID | Task | Start | Finish | Duration | Complete | Total float | Predecessors | Other |
| --- | --- | --- | --- | --- | --- | --- | --- | --- |
| 76 | 对象描述 | 2018-11-01 13:00 A → 2018-11-03 08:00 A (+2d) | 2018-11-02 12:00 A → 2018-11-03 17:00 A (+1d) | 1d? → 1d |  |  |  | baseline start none → 2018-10-30 08:00; baseline finish none → 2018-10-30 17:00 |
| 77 | **用例详细设计** | 2018-11-02 13:00 A → 2018-11-04 08:00 A (+2d) | 2018-11-05 12:00 A → 2018-11-06 12:00 A (+1d) | 1d? → 1.5d? |  |  |  | baseline start none → 2018-10-31 08:00; baseline finish none → 2018-10-31 17:00 |
| 78 | 系统顺序图设计 | 2018-11-02 13:00 A → 2018-11-04 08:00 A (+2d) | 2018-11-05 12:00 A → 2018-11-05 17:00 A | 1d? → 2d |  |  |  | baseline start none → 2018-10-31 08:00; baseline finish none → 2018-10-31 17:00 |
| 79 | 系统状态图设计 | 2018-11-02 13:00 A → 2018-11-06 08:00 A (+4d) | 2018-11-05 12:00 A → 2018-11-06 12:00 A (+1d) | 1d? → 0.5d? |  |  |  | baseline start none → 2018-10-31 08:00; baseline finish none → 2018-10-31 17:00 |
| 80 | 审阅详细设计 | 2018-11-05 13:00 A → 2018-11-08 08:00 A (+3d) | 2018-11-06 12:00 A → 2018-11-08 12:00 A (+2d) | 1d → 0.5d |  |  |  | baseline start none → 2018-11-05 08:00; baseline finish none → 2018-11-05 17:00 |
| 81 | 根据反馈修改详细设计 | 2018-11-05 13:00 A → 2018-11-08 08:00 A (+3d) | 2018-11-06 12:00 A → 2018-11-08 17:00 (+2d) |  | 100% → 80% | none → 16d |  | baseline start none → 2018-11-05 08:00; baseline finish none → 2018-11-05 17:00 |
| 82 | 详细设计完成 | 2018-11-06 13:00 A → 2018-11-09 08:00 (+3d) | 2018-11-07 12:00 A → 2018-11-09 17:00 (+2d) |  | 100% → 0% | none → 16d |  | baseline start none → 2018-11-06 08:00; baseline finish none → 2018-11-06 17:00 |
| 83 | 设计工作完成 | 2018-11-07 12:00 A → 2018-11-09 17:00 (+2d) | 2018-11-07 12:00 A → 2018-11-09 17:00 (+2d) |  | 100% → 0% | none → 16d |  | baseline start none → 2018-11-06 17:00; baseline finish none → 2018-11-06 17:00 |
| 84 | **开发** | 2018-10-23 13:00 A → 2018-10-16 08:00 A (-7d) | 2018-11-15 11:13 → 2018-11-13 17:00 (-2d) | 16.9d? → 21d? | 8% → 16% |  |  | baseline start none → 2018-10-19 08:00; baseline finish none → 2018-11-12 16:13 |
| 85 | 审阅需求文档 | 2018-10-23 13:00 A → 2018-10-16 08:00 A (-7d) | 2018-10-23 17:00 A → 2018-10-16 17:00 A (-7d) | 0.5d → 1d |  |  | none → 38FS+2d | baseline start none → 2018-10-19 08:00; baseline finish none → 2018-10-19 12:00 |
| 86 | 制定开发计划 | 2018-10-24 08:00 A → 2018-10-17 08:00 A (-7d) | 2018-10-24 17:00 A → 2018-10-17 17:00 A (-7d) |  |  |  |  | baseline start none → 2018-10-19 13:00; baseline finish none → 2018-10-22 12:00 |
| 87 | 分派任务给开发人员 | 2018-10-25 08:00 A → 2018-10-18 08:00 A (-7d) | 2018-10-26 11:13 A → 2018-10-18 13:13 A (-8d) | 1d → 0.12d |  |  |  | baseline start none → 2018-10-22 13:00; baseline finish none → 2018-10-23 16:13 |
| 88 | **知识学习** | 2018-10-26 11:13 → 2018-10-22 13:00 (-4d) | 2018-11-02 11:13 → 2018-10-29 12:00 (-4d) |  |  | 8d → 11.5d |  | baseline start none → 2018-10-23 16:13; baseline finish none → 2018-10-30 16:13 |
| 89 | 前端知识学习 | 2018-10-26 11:13 → 2018-10-22 13:00 (-4d) | 2018-10-31 11:13 → 2018-10-25 12:00 (-6d) |  |  | 8d → 11.5d |  | baseline start none → 2018-10-23 16:13; baseline finish none → 2018-10-26 16:13 |
| 90 | 后端知识学习 | 2018-10-26 11:13 → 2018-10-22 13:00 (-4d) | 2018-11-02 11:13 → 2018-10-29 12:00 (-4d) |  |  | 8d → 11.5d |  | baseline start none → 2018-10-23 16:13; baseline finish none → 2018-10-30 16:13 |
| 91 | demo搭建 | 2018-11-02 11:13 → 2018-11-08 08:00 A (+6d) | 2018-11-05 11:13 → 2018-11-08 17:00 A (+3d) | 1d? → 1d | 0% → 100% | 8d → none |  | resources none → 吴潘安; baseline start none → 2018-10-30 16:13; baseline finish none → 2018-10-31 16:13 |
| 92 | **编写代码** | 2018-11-02 11:13 → 2018-11-01 08:00 A (-1d) | 2018-11-15 11:13 → 2018-11-13 17:00 (-2d) |  | 0% → 13% |  |  | baseline start none → 2018-10-30 16:13; baseline finish none → 2018-11-12 16:13 |
| 93 | **前端代码编写** | 2018-11-02 11:13 → 2018-11-01 08:00 A (-1d) | 2018-11-07 11:13 → 2018-11-08 17:00 (+1d) | 3d? → 6d? | 0% → 26% | 6d → 3d |  | baseline start none → 2018-10-30 16:13; baseline finish none → 2018-11-02 16:13 |
| 94 | 主页编码 | 2018-11-02 11:13 → 2018-11-01 08:00 A (-1d) | 2018-11-02 16:13 → 2018-11-02 17:00 | 0.5d → 2d | 0% → 75% | 6d → 3.5d |  | baseline start none → 2018-10-30 16:13; baseline finish none → 2018-10-31 11:13 |
| 95 | 注册登录页编码 | 2018-11-02 16:13 → 2018-11-05 08:00 (+3d) | 2018-11-05 16:13 → 2018-11-06 17:00 (+1d) | 1d? → 2d? |  | 6d → 3.5d |  | baseline start none → 2018-10-31 11:13; baseline finish none → 2018-11-01 11:13 |
| 96 | 留言板页编码 | 2018-11-05 16:13 → 2018-11-07 08:00 (+2d) | 2018-11-06 11:13 → 2018-11-07 12:00 (+1d) |  |  | 6d → 3.5d |  | baseline start none → 2018-11-01 11:13; baseline finish none → 2018-11-01 16:13 |
| 97 | 课程页编码 | 2018-11-06 11:13 → 2018-11-07 13:00 (+1d) | 2018-11-07 11:13 → 2018-11-08 12:00 (+1d) |  |  | 6d → 3.5d |  | baseline start none → 2018-11-01 16:13; baseline finish none → 2018-11-02 16:13 |
| 98 | 管理员页编码 | 2018-11-02 11:13 → 2018-11-01 08:00 (-1d) | 2018-11-06 11:13 → 2018-11-02 17:00 (-4d) |  |  |  |  | baseline start none → 2018-10-30 16:13; baseline finish none → 2018-11-01 16:13 |
| 99 | 个人中心页编码 | 2018-11-02 11:13 → 2018-11-08 08:00 A (+6d) | 2018-11-06 11:13 → 2018-11-08 17:00 (+2d) | 2d → 1d | 0% → 70% | 7d → 3d |  | baseline start none → 2018-10-30 16:13; baseline finish none → 2018-11-01 16:13 |
| 100 | **后端代码编写** | 2018-11-09 11:13 → 2018-11-08 08:00 (-1d) | 2018-11-14 11:13 → 2018-11-12 17:00 (-2d) |  |  |  |  | baseline start none → 2018-11-06 16:13; baseline finish none → 2018-11-09 16:13 |
| 101 | 接口实现 | 2018-11-09 11:13 → 2018-11-08 08:00 (-1d) | 2018-11-12 11:13 → 2018-11-08 17:00 (-4d) |  |  |  |  | baseline start none → 2018-11-06 16:13; baseline finish none → 2018-11-07 16:13 |
| 102 | 注册登录注销业务编码 | 2018-11-12 11:13 → 2018-11-09 08:00 (-3d) | 2018-11-13 11:13 → 2018-11-09 17:00 (-4d) |  |  |  |  | baseline start none → 2018-11-07 16:13; baseline finish none → 2018-11-08 16:13 |
| 103 | 留言板业务编码 | 2018-11-13 11:13 → 2018-11-12 08:00 (-1d) | 2018-11-14 11:13 → 2018-11-12 17:00 (-2d) |  |  |  |  | baseline start none → 2018-11-08 16:13; baseline finish none → 2018-11-09 16:13 |
| 104 | 课程业务编码 | 2018-11-12 11:13 → 2018-11-09 08:00 (-3d) | 2018-11-13 11:13 → 2018-11-09 17:00 (-4d) |  |  |  |  | baseline start none → 2018-11-07 16:13; baseline finish none → 2018-11-08 16:13 |
| 105 | 课程管理业务编码 | 2018-11-13 11:13 → 2018-11-12 08:00 (-1d) | 2018-11-14 11:13 → 2018-11-12 17:00 (-2d) |  |  |  |  | baseline start none → 2018-11-08 16:13; baseline finish none → 2018-11-09 16:13 |
| 106 | 数据库搭建 | 2018-11-12 11:13 → 2018-11-09 08:00 (-3d) | 2018-11-15 11:13 → 2018-11-13 17:00 (-2d) |  |  |  |  | baseline start none → 2018-11-07 16:13; baseline finish none → 2018-11-12 16:13 |
| 107 | **开发人员测试(初步调试)** | 2018-11-02 11:13 → 2018-11-06 08:00 (+4d) | 2018-11-14 11:13 → 2018-11-12 17:00 (-2d) | 8d → 5d |  |  |  | baseline start none → 2018-10-30 16:13; baseline finish none → 2018-11-09 16:13 |
| 108 | 前端代码测试 | 2018-11-02 11:13 → 2018-11-06 08:00 (+4d) | 2018-11-07 11:13 → 2018-11-08 17:00 (+1d) |  |  | 6d → 3d |  | baseline start none → 2018-10-30 16:13; baseline finish none → 2018-11-02 16:13 |
| 109 | 后台代码测试 | 2018-11-09 11:13 → 2018-11-08 08:00 (-1d) | 2018-11-14 11:13 → 2018-11-12 17:00 (-2d) |  |  |  |  | baseline start none → 2018-11-06 16:13; baseline finish none → 2018-11-09 16:13 |
| 110 | 开发工作完毕 | 2018-11-15 11:13 → 2018-11-13 17:00 (-2d) | 2018-11-15 11:13 → 2018-11-13 17:00 (-2d) |  |  |  |  | baseline start none → 2018-11-12 16:13; baseline finish none → 2018-11-12 16:13 |
| 111 | **测试** | 2018-11-15 11:13 → 2018-11-14 08:00 (-1d) | 2018-12-04 11:13 → 2018-11-30 17:00 (-4d) |  |  |  |  | baseline start none → 2018-11-12 16:13; baseline finish none → 2018-11-29 16:13 |
| 112 | 制定单元测试计划 | 2018-11-15 11:13 → 2018-11-14 08:00 (-1d) | 2018-11-16 11:13 → 2018-11-14 17:00 (-2d) |  |  |  | none → 110 | baseline start none → 2018-11-12 16:13; baseline finish none → 2018-11-13 16:13 |
| 113 | 制定整体测试计划 | 2018-11-16 11:13 → 2018-11-15 08:00 (-1d) | 2018-11-19 11:13 → 2018-11-15 17:00 (-4d) |  |  |  |  | baseline start none → 2018-11-13 16:13; baseline finish none → 2018-11-14 16:13 |
| 114 | **单元测试** | 2018-11-20 11:13 → 2018-11-19 08:00 (-1d) | 2018-11-28 11:13 → 2018-11-26 17:00 (-2d) |  |  |  |  | baseline start none → 2018-11-15 16:13; baseline finish none → 2018-11-23 16:13 |
| 115 | **审阅模块化代码** | 2018-11-20 11:13 → 2018-11-19 08:00 (-1d) | 2018-11-23 11:13 → 2018-11-21 17:00 (-2d) |  |  |  |  | baseline start none → 2018-11-15 16:13; baseline finish none → 2018-11-20 16:13 |
| 116 | 审阅前端代码 | 2018-11-20 11:13 → 2018-11-19 08:00 (-1d) | 2018-11-23 11:13 → 2018-11-21 17:00 (-2d) |  |  |  |  | baseline start none → 2018-11-15 16:13; baseline finish none → 2018-11-20 16:13 |
| 117 | 审阅后台代码 | 2018-11-20 11:13 → 2018-11-19 08:00 (-1d) | 2018-11-23 11:13 → 2018-11-21 17:00 (-2d) |  |  |  |  | baseline start none → 2018-11-15 16:13; baseline finish none → 2018-11-20 16:13 |
| 118 | 测试组件模块是否符合产品规范 | 2018-11-20 11:13 → 2018-11-19 08:00 (-1d) | 2018-11-26 11:13 → 2018-11-22 17:00 (-4d) |  |  |  |  | baseline start none → 2018-11-15 16:13; baseline finish none → 2018-11-21 16:13 |
| 119 | 找出不符合规范的异常情况 | 2018-11-20 11:13 → 2018-11-19 08:00 (-1d) | 2018-11-26 11:13 → 2018-11-22 17:00 (-4d) |  |  |  |  | baseline start none → 2018-11-15 16:13; baseline finish none → 2018-11-21 16:13 |
| 120 | 修改代码 | 2018-11-21 11:13 → 2018-11-20 08:00 (-1d) | 2018-11-26 11:13 → 2018-11-22 17:00 (-4d) |  |  |  |  | baseline start none → 2018-11-16 16:13; baseline finish none → 2018-11-21 16:13 |
| 121 | 重新测试经过修改的代码 | 2018-11-26 11:13 → 2018-11-23 08:00 (-3d) | 2018-11-28 11:13 → 2018-11-26 17:00 (-2d) |  |  |  |  | baseline start none → 2018-11-21 16:13; baseline finish none → 2018-11-23 16:13 |
| 122 | 单元测试完成 | 2018-11-28 11:13 → 2018-11-26 17:00 (-2d) | 2018-11-28 11:13 → 2018-11-26 17:00 (-2d) |  |  |  |  | baseline start none → 2018-11-23 16:13; baseline finish none → 2018-11-23 16:13 |
| 123 | **整体测试** | 2018-11-28 11:13 → 2018-11-27 08:00 (-1d) | 2018-12-04 11:13 → 2018-11-30 17:00 (-4d) |  |  |  |  | baseline start none → 2018-11-23 16:13; baseline finish none → 2018-11-29 16:13 |
| 124 | 测试模块集成情况 | 2018-11-28 11:13 → 2018-11-27 08:00 (-1d) | 2018-11-30 11:13 → 2018-11-28 17:00 (-2d) |  |  |  |  | baseline start none → 2018-11-23 16:13; baseline finish none → 2018-11-27 16:13 |
| 125 | 找出不符合规范的异常情况 | 2018-11-28 11:13 → 2018-11-27 08:00 (-1d) | 2018-12-03 11:13 → 2018-11-29 17:00 (-4d) |  |  |  |  | baseline start none → 2018-11-23 16:13; baseline finish none → 2018-11-28 16:13 |
| 126 | 修改代码 | 2018-11-28 11:13 → 2018-11-27 08:00 (-1d) | 2018-12-03 11:13 → 2018-11-29 17:00 (-4d) |  |  |  |  | baseline start none → 2018-11-23 16:13; baseline finish none → 2018-11-28 16:13 |
| 127 | 重新测试经过修改的代码 | 2018-12-03 11:13 → 2018-11-30 08:00 (-3d) | 2018-12-04 11:13 → 2018-11-30 17:00 (-4d) |  |  |  |  | baseline start none → 2018-11-28 16:13; baseline finish none → 2018-11-29 16:13 |
| 128 | 整体测试完成 | 2018-12-04 11:13 → 2018-11-30 17:00 (-4d) | 2018-12-04 11:13 → 2018-11-30 17:00 (-4d) |  |  |  |  | baseline start none → 2018-11-29 16:13; baseline finish none → 2018-11-29 16:13 |
| 129 | **试生产** | 2018-11-15 11:13 → 2018-11-14 08:00 (-1d) | 2018-12-05 11:13 → 2018-12-03 17:00 (-2d) |  |  |  |  | baseline start none → 2018-11-12 16:13; baseline finish none → 2018-11-30 16:13 |
| 130 | 确定测试群体 | 2018-11-15 11:13 → 2018-11-14 08:00 (-1d) | 2018-11-15 16:13 → 2018-11-14 12:00 (-1d) |  |  |  | none → 110 | baseline start none → 2018-11-12 16:13; baseline finish none → 2018-11-13 11:13 |
| 131 | 获得用户反馈 | 2018-12-04 11:13 → 2018-12-03 08:00 (-1d) | 2018-12-04 16:13 → 2018-12-03 12:00 (-1d) |  |  |  |  | baseline start none → 2018-11-29 16:13; baseline finish none → 2018-11-30 11:13 |
| 132 | 评估测试信息 | 2018-12-04 16:13 → 2018-12-03 13:00 (-1d) | 2018-12-05 11:13 → 2018-12-03 17:00 (-2d) |  |  |  |  | baseline start none → 2018-11-30 11:13; baseline finish none → 2018-11-30 16:13 |
| 133 | 试生产工作完成 | 2018-12-05 11:13 → 2018-12-03 17:00 (-2d) | 2018-12-05 11:13 → 2018-12-03 17:00 (-2d) |  |  |  |  | baseline start none → 2018-11-30 16:13; baseline finish none → 2018-11-30 16:13 |
| 134 | **部署** | 2018-10-26 11:13 → 2018-10-18 13:13 (-8d) | 2018-11-20 11:13 → 2018-11-12 13:13 (-8d) |  |  | 11d → 15.47d |  | baseline start none → 2018-10-23 16:13; baseline finish none → 2018-11-15 16:13 |
| 135 | 确定部署策略 | 2018-10-26 11:13 → 2018-10-18 13:13 (-8d) | 2018-10-29 11:13 → 2018-10-19 13:13 (-10d) |  |  | 11d → 15.47d | none → 87 | baseline start none → 2018-10-23 16:13; baseline finish none → 2018-10-24 16:13 |
| 136 | 确定部署方法 | 2018-10-29 11:13 → 2018-10-19 13:13 (-10d) | 2018-10-30 11:13 → 2018-10-22 13:13 (-8d) |  |  | 11d → 15.47d |  | baseline start none → 2018-10-24 16:13; baseline finish none → 2018-10-25 16:13 |
| 137 | 获得部署所需资源 | 2018-11-01 11:13 → 2018-10-24 13:13 (-8d) | 2018-11-02 11:13 → 2018-10-25 13:13 (-8d) |  |  | 11d → 15.47d |  | baseline start none → 2018-10-29 16:13; baseline finish none → 2018-10-30 16:13 |
| 138 | 培训技术支持人员 | 2018-11-09 11:13 → 2018-11-01 13:13 (-8d) | 2018-11-13 11:13 → 2018-11-05 13:13 (-8d) |  |  | 11d → 15.47d |  | baseline start none → 2018-11-06 16:13; baseline finish none → 2018-11-08 16:13 |
| 139 | 部署软件 | 2018-11-15 11:13 → 2018-11-07 13:13 (-8d) | 2018-11-20 11:13 → 2018-11-12 13:13 (-8d) |  |  | 11d → 15.47d |  | baseline start none → 2018-11-12 16:13; baseline finish none → 2018-11-15 16:13 |
| 140 | 部署工作完成 | 2018-11-20 11:13 → 2018-11-12 13:13 (-8d) | 2018-11-20 11:13 → 2018-11-12 13:13 (-8d) |  |  | 11d → 15.47d |  | baseline start none → 2018-11-15 16:13; baseline finish none → 2018-11-15 16:13 |
| 141 | **监控** |  |  |  | 16% → 34% |  | none → 1SS | baseline start none → 2018-09-27 08:00; baseline finish none → 2018-12-04 17:00 |
| 142 | 周会1 |  |  |  |  |  |  | baseline start none → 2018-09-27 08:00; baseline finish none → 2018-09-27 10:00 |
| 143 | 短谈1 |  |  |  |  |  |  | baseline start none → 2018-10-09 08:00; baseline finish none → 2018-10-09 08:15 |
| 144 | 周会2 |  |  |  |  |  |  | baseline start none → 2018-10-11 08:00; baseline finish none → 2018-10-11 10:00 |
| 145 | 短谈2 |  |  |  |  |  |  | baseline start none → 2018-10-16 08:00; baseline finish none → 2018-10-16 08:15 |

| ID | Task | Start | Finish | Duration | Complete | Total float | Predecessors | Other |
| --- | --- | --- | --- | --- | --- | --- | --- | --- |
| 146 | 周会3 |  |  |  |  |  |  | baseline start none → 2018-10-18 08:00; baseline finish none → 2018-10-18 10:00 |
| 147 | 短谈3 |  |  |  |  |  |  | baseline start none → 2018-10-23 08:00; baseline finish none → 2018-10-23 08:15 |
| 148 | 周会4 |  |  |  |  |  |  | baseline start none → 2018-10-25 08:00; baseline finish none → 2018-10-25 10:00 |
| 149 | 短谈4 |  |  |  |  |  |  | baseline start none → 2018-10-30 08:00; baseline finish none → 2018-10-30 08:15 |
| 150 | 周会5 |  |  |  |  |  |  | baseline start none → 2018-11-01 08:00; baseline finish none → 2018-11-01 10:00 |
| 151 | 短谈5 |  |  |  |  |  |  | baseline start none → 2018-11-06 08:00; baseline finish none → 2018-11-06 08:15 |
| 152 | 周会6 | 2018-11-08 08:00 A | 2018-11-08 10:00 A |  | 0% → 100% |  |  | baseline start none → 2018-11-08 08:00; baseline finish none → 2018-11-08 10:00 |
| 153 | 短谈6 | 2018-11-13 08:00 A | 2018-11-13 17:00 → 2018-11-13 10:00 A | 1d? → 0.25d? | 0% → 100% |  |  | resources none → 卢彦谚; 吴潘安; 吴志祥; 谢旻珊; 谢珮爽; 谢哲威; baseline start none → 2018-11-13 08:00; baseline finish none → 2018-11-13 17:00 |
| 154 | 周会7 | 2018-11-15 08:00 A | 2018-11-15 17:00 → 2018-11-15 10:00 A | 1d? → 2h? | 0% → 100% |  |  | resources none → 卢彦谚; 吴潘安; 吴志祥; 谢旻珊; 谢珮爽; 谢哲威; baseline start none → 2018-11-15 08:00; baseline finish none → 2018-11-15 17:00 |
| 155 | 短会7 |  | 2018-11-20 17:00 → 2018-11-20 10:00 | 1d? → 0.25d? |  |  |  | baseline start none → 2018-11-20 08:00; baseline finish none → 2018-11-20 17:00 |
| 156 | 周会8 |  |  |  |  |  |  | baseline start none → 2018-11-22 08:00; baseline finish none → 2018-11-22 17:00 |
| 157 | 短会8 |  |  |  |  |  |  | baseline start none → 2018-11-27 08:00; baseline finish none → 2018-11-27 17:00 |
| 158 | 周会9 |  |  |  |  |  |  | baseline start none → 2018-11-29 08:00; baseline finish none → 2018-11-29 17:00 |
| 159 | 短会9 |  |  |  |  |  |  | baseline start none → 2018-12-04 08:00; baseline finish none → 2018-12-04 17:00 |
| 160 | **收尾** | 2018-11-15 11:13 → 2018-11-16 08:00 (+1d) | 2018-12-07 16:13 → 2018-12-06 12:00 (-1d) | 16.5d? → 14.5d? |  |  | 129SS → 17FS-12d | baseline start none → 2018-11-12 16:13; baseline finish none → 2018-12-05 11:13 |
| 161 | **文档整理** | 2018-11-15 11:13 → 2018-11-16 08:00 (+1d) | 2018-12-03 11:13 → 2018-12-03 17:00 |  |  | 2d → 0d | none → 129FS-12d | was named 文档; baseline start none → 2018-11-12 16:13; baseline finish none → 2018-11-28 16:13 |
| 162 | 制定“帮助”规范计划 | 2018-11-15 11:13 → 2018-11-16 08:00 (+1d) | 2018-11-15 16:13 → 2018-11-16 12:00 (+1d) |  |  | 2d → 0d | none → 133FS-12d | baseline start none → 2018-11-12 16:13; baseline finish none → 2018-11-13 11:13 |
| 163 | 编写“帮助”文档 | 2018-11-15 16:13 → 2018-11-16 13:00 (+1d) | 2018-11-16 16:13 → 2018-11-19 12:00 (+3d) |  |  | 2d → 0d |  | baseline start none → 2018-11-13 11:13; baseline finish none → 2018-11-14 11:13 |
| 164 | 开发“帮助”系统 | 2018-11-16 16:13 → 2018-11-19 13:00 (+3d) | 2018-11-21 16:13 → 2018-11-22 12:00 (+1d) |  |  | 9.5d → 7.5d |  | baseline start none → 2018-11-14 11:13; baseline finish none → 2018-11-19 11:13 |
| 165 | 审阅“帮助”文档 | 2018-11-16 16:13 → 2018-11-19 13:00 (+3d) | 2018-11-19 11:13 → 2018-11-19 17:00 |  |  | 2d → 0d |  | baseline start none → 2018-11-14 11:13; baseline finish none → 2018-11-14 16:13 |
| 166 | 根据反馈修改“帮助”文档 | 2018-11-26 11:13 → 2018-11-27 08:00 (+1d) | 2018-11-27 11:13 → 2018-11-27 17:00 |  |  | 2d → 0d |  | baseline start none → 2018-11-21 16:13; baseline finish none → 2018-11-22 16:13 |
| 167 | 制定用户手册规范 | 2018-11-27 11:13 → 2018-11-28 08:00 (+1d) | 2018-11-27 16:13 → 2018-11-28 12:00 (+1d) |  |  | 2d → 0d |  | baseline start none → 2018-11-22 16:13; baseline finish none → 2018-11-23 11:13 |
| 168 | 编写用户手册 | 2018-11-27 16:13 → 2018-11-28 13:00 (+1d) | 2018-11-28 16:13 → 2018-11-29 12:00 (+1d) |  |  | 2d → 0d |  | baseline start none → 2018-11-23 11:13; baseline finish none → 2018-11-26 11:13 |
| 169 | 审阅所有的用户文档 | 2018-11-28 16:13 → 2018-11-29 13:00 (+1d) | 2018-11-29 11:13 → 2018-11-29 17:00 |  |  | 2d → 0d |  | baseline start none → 2018-11-26 11:13; baseline finish none → 2018-11-26 16:13 |
| 170 | 根据反馈修改用户文档 | 2018-11-29 11:13 → 2018-11-30 08:00 (+1d) | 2018-11-30 11:13 → 2018-11-30 17:00 |  |  | 2d → 0d |  | baseline start none → 2018-11-26 16:13; baseline finish none → 2018-11-27 16:13 |
| 171 | 文档整理完成 | 2018-11-30 11:13 → 2018-12-03 08:00 (+3d) | 2018-12-03 11:13 → 2018-12-03 17:00 |  |  | 2d → 0d |  | baseline start none → 2018-11-27 16:13; baseline finish none → 2018-11-28 16:13 |
| 172 | **总结经验教训** | 2018-12-05 11:13 → 2018-12-04 08:00 (-1d) | 2018-12-07 16:13 → 2018-12-06 12:00 (-1d) |  |  |  | 17, 161 → 161 | baseline start none → 2018-11-30 16:13; baseline finish none → 2018-12-05 11:13 |
| 173 | 将经验教训记录存档 | 2018-12-05 11:13 → 2018-12-04 08:00 (-1d) | 2018-12-06 11:13 → 2018-12-04 17:00 (-2d) |  |  |  | none → 171 | baseline start none → 2018-11-30 16:13; baseline finish none → 2018-12-03 16:13 |
| 174 | 分发给工作组成员 | 2018-12-06 11:13 → 2018-12-05 08:00 (-1d) | 2018-12-06 16:13 → 2018-12-05 12:00 (-1d) |  |  |  |  | baseline start none → 2018-12-03 16:13; baseline finish none → 2018-12-04 11:13 |
| 175 | 回顾完成 | 2018-12-06 16:13 → 2018-12-05 13:00 (-1d) | 2018-12-07 16:13 → 2018-12-06 12:00 (-1d) |  |  |  |  | baseline start none → 2018-12-04 11:13; baseline finish none → 2018-12-05 11:13 |

## Version 3 (saved 2018-12-29, file 项目综合管理计划v4.1.mpp)

Note of the change: XStrachey 整理“”

Last finish 2018-12-06 → 2018-12-18 (+12d). Complete tasks 73 → 151.

Added:

| ID | Task | Duration | Start | Finish | Predecessors | Resources |
| --- | --- | --- | --- | --- | --- | --- |
| 17 | 项目综合管理计划 | 1d? | 2018-10-03 08:00 A | 2018-10-03 17:00 A | 16 | 谢哲威 |
| 77 | 登录顺序图设计 | 0.5d? | 2018-11-05 08:00 A | 2018-11-05 12:00 A |  | 吴潘安 |
| 78 | 注册顺序图设计 | 0.5d? | 2018-11-05 13:00 A | 2018-11-05 17:00 A | 77 | 吴潘安 |
| 79 | 注销顺序图设计 | 0.5d? | 2018-11-06 08:00 A | 2018-11-06 12:00 A | 78 | 吴潘安 |
| 80 | 课程选择顺序图设计 | 0.5d? | 2018-11-06 13:00 A | 2018-11-06 17:00 A | 79 | 吴潘安 |
| 81 | 专注度管理顺序图设计 | 0.5d? | 2018-11-05 08:00 A | 2018-11-05 12:00 A |  | 谢旻珊 |
| 82 | 个人中心查看顺序图设计 | 0.5d? | 2018-11-05 13:00 A | 2018-11-05 17:00 A | 81 | 谢旻珊 |
| 83 | 实例展示顺序图设计 | 0.5d? | 2018-11-06 08:00 A | 2018-11-06 12:00 A | 82 | 谢旻珊 |
| 84 | 在线编译顺序图设计 | 0.5d? | 2018-11-06 13:00 A | 2018-11-06 17:00 A | 83 | 谢旻珊 |
| 85 | 留言板加载顺序图设计 | 0.5d? | 2018-11-05 08:00 A | 2018-11-05 12:00 A |  | 卢彦谚 |
| 86 | 留言发布顺序图设计 | 0.5d? | 2018-11-05 13:00 A | 2018-11-05 17:00 A | 85 | 卢彦谚 |
| 87 | 留言回复顺序图设计 | 0.5d? | 2018-11-06 08:00 A | 2018-11-06 12:00 A | 86 | 卢彦谚 |
| 88 | 课程添加顺序图设计 | 0.5d? | 2018-11-07 08:00 A | 2018-11-07 12:00 A | 80 | 吴潘安 |
| 89 | 课程删除顺序图设计 | 0.5d? | 2018-11-07 13:00 A | 2018-11-07 17:00 A | 88 | 吴潘安 |
| 90 | 课程内容管理顺序图设计 | 0.5d? | 2018-11-08 08:00 A | 2018-11-08 12:00 A | 89 | 吴潘安 |
| 92 | 用户登录状态图设计 | 0.5d? | 2018-11-05 08:00 A | 2018-11-05 12:00 A |  | 谢珮爽 |
| 93 | 专注度管理状态图设计 | 0.5d? | 2018-11-05 13:00 A | 2018-11-05 17:00 A | 92 | 谢珮爽 |
| 94 | 课程管理状态图设计 | 0.5d? | 2018-11-05 08:00 A | 2018-11-05 12:00 A |  | 吴志祥 |
| 119 | 个人中心业务编码 | 5d? | 2018-11-15 08:00 A | 2018-11-21 17:00 A | 116 | 卢彦谚 |

Removed: 62 制定功能规范; 63 审阅功能规范; 64 根据反馈修改功能规范; 163 编写“帮助”文档; 164 开发“帮助”系统; 165 审阅“帮助”文档; 166 根据反馈修改“帮助”文档

Changed:

| ID | Task | Start | Finish | Duration | Complete | Total float | Predecessors | Other |
| --- | --- | --- | --- | --- | --- | --- | --- | --- |
| 5 | **计划** |  | 2018-10-02 12:00 → 2018-10-07 17:00 A (+5d) | 3.5d? → 7d? | 55% → 100% | -0.38d → none |  |  |
| 6 | **项目范围计划** |  | 2018-10-02 12:00 → 2018-10-07 17:00 A (+5d) | 3.5d → 7d | 33% → 100% | -3d → none |  |  |
| 10 | 确定项目范围规划 | 2018-09-27 13:00 → 2018-10-05 08:00 A (+8d) | 2018-10-02 12:00 → 2018-10-07 17:00 A (+5d) | 3d → 1d | 0% → 100% | -3.5d → none |  |  |
| 18 | **执行** |  | 2018-12-03 17:00 → 2018-12-17 12:00 A (+14d) | 48d? → 57.5d? | 42% → 100% | 0d → none |  |  |
| 19 | **需求分析调研** |  | 2018-10-18 12:00 → 2018-10-24 17:00 A (+6d) | 15.5d? → 20d? | 99% → 100% | 0d → none | 16 → 17 |  |
| 28 | **原型设计** |  | 2018-10-10 17:00 A → 2018-10-24 17:00 A (+14d) | 9d? → 19d? |  |  |  | was named 原型开发 |
| 34 | 完善原型 |  |  |  |  |  | 19 → 29, 30, 31, 32, 33 |  |
| 40 | 需求分析完成 | 2018-10-18 12:00 A | 2018-10-18 12:00 A |  | 0% → 100% | -4.5d → none |  |  |
| 41 | **设计** |  | 2018-11-09 17:00 A |  | 88% → 100% | 16d → none |  |  |
| 42 | **概要设计** |  | 2018-10-29 17:00 A |  | 94% → 100% | -1d → none |  |  |
| 46 | **系统数据模型** |  | 2018-10-24 17:00 A → 2018-10-23 17:00 A (-1d) | 3d? → 2d? |  |  |  |  |
| 51 | 用户界面设计 |  |  |  |  |  | 34 → none |  |
| 61 | 概要设计完成 | 2018-10-29 08:00 A | 2018-10-29 17:00 A |  | 0% → 100% | -6d → none |  |  |
| 62 | **详细设计** | 2018-10-20 08:00 A → 2018-10-21 08:00 A (+1d) | 2018-11-09 17:00 A |  | 81% → 100% | 16d → none |  |  |
| 63 | 制定系统编程规范约定 | 2018-10-20 08:00 A → 2018-10-21 08:00 A (+1d) | 2018-10-20 17:00 A → 2018-10-21 17:00 A (+1d) |  |  |  | 根据反馈修改功能规范 → none | baseline start 2018-10-30 08:00 → 2018-10-18 08:00; baseline finish 2018-10-30 12:00 → 2018-10-22 17:00 |
| 64 | 审阅编程规范 | 2018-10-20 08:00 A → 2018-10-21 08:00 A (+1d) | 2018-10-20 17:00 A → 2018-10-21 17:00 A (+1d) |  |  |  |  |  |
| 65 | 根据反馈修改编程规范 | 2018-10-20 08:00 A → 2018-10-22 08:00 A (+2d) | 2018-10-20 17:00 A → 2018-10-22 17:00 A (+2d) |  |  |  |  |  |
| 75 | **用例详细设计** | 2018-11-04 08:00 A → 2018-11-05 08:00 A (+1d) | 2018-11-06 12:00 A → 2018-11-08 12:00 A (+2d) | 1.5d? → 3.5d? |  |  |  |  |
| 76 | **系统顺序图设计** | 2018-11-04 08:00 A → 2018-11-05 08:00 A (+1d) | 2018-11-05 17:00 A → 2018-11-08 12:00 A (+3d) | 2d → 3.5d? |  |  |  | resources 卢彦谚; 谢旻珊 → none |
| 91 | **系统状态图设计** | 2018-11-06 08:00 A → 2018-11-05 08:00 A (-1d) | 2018-11-06 12:00 A → 2018-11-05 17:00 A (-1d) | 0.5d? → 1d? |  |  |  | resources 吴志祥; 谢珮爽 → none |
| 96 | 根据反馈修改详细设计 |  | 2018-11-08 17:00 A |  | 80% → 100% | 16d → none |  |  |
| 97 | 详细设计完成 | 2018-11-09 08:00 A | 2018-11-09 17:00 A |  | 0% → 100% | 16d → none |  |  |
| 98 | 设计工作完成 | 2018-11-09 17:00 A | 2018-11-09 17:00 A |  | 0% → 100% | 16d → none |  |  |
| 99 | **开发** |  | 2018-11-13 17:00 → 2018-12-10 17:00 A (+27d) | 21d? → 40d? | 16% → 100% | 0d → none |  |  |
| 103 | **知识学习** | 2018-10-22 13:00 → 2018-10-16 08:00 A (-6d) | 2018-10-29 12:00 → 2018-10-30 17:00 A (+1d) | 5d → 11d | 0% → 100% | 11.5d → none |  |  |
| 104 | 前端知识学习 | 2018-10-22 13:00 → 2018-10-25 08:00 A (+3d) | 2018-10-25 12:00 → 2018-10-30 17:00 A (+5d) | 3d → 4d | 0% → 100% | 11.5d → none |  |  |
| 105 | 后端知识学习 | 2018-10-22 13:00 → 2018-10-16 08:00 A (-6d) | 2018-10-29 12:00 → 2018-10-28 17:00 A (-1d) | 5d → 9d | 0% → 100% | 11.5d → none |  |  |
| 106 | demo搭建 | 2018-11-08 08:00 A → 2018-11-09 08:00 A (+1d) | 2018-11-08 17:00 A → 2018-11-13 17:00 A (+5d) | 1d → 3d |  |  |  |  |
| 107 | **编写代码** | 2018-11-01 08:00 A → 2018-11-06 08:00 A (+5d) | 2018-11-13 17:00 → 2018-12-09 17:00 A (+26d) | 9d? → 24d? | 13% → 100% | 0d → none |  |  |
| 108 | **前端代码编写** | 2018-11-01 08:00 A → 2018-11-06 08:00 A (+5d) | 2018-11-08 17:00 → 2018-12-05 17:00 A (+27d) | 6d? → 22d? | 26% → 100% | 3d → none |  | resources 谢旻珊; 谢珮爽; 谢哲威 → none |
| 109 | 主页编码 | 2018-11-01 08:00 A → 2018-11-06 08:00 A (+5d) | 2018-11-02 17:00 → 2018-11-07 17:00 A (+5d) |  | 75% → 100% | 3.5d → none |  |  |
| 110 | 注册登录页编码 | 2018-11-05 08:00 → 2018-11-09 08:00 A (+4d) | 2018-11-06 17:00 → 2018-11-10 17:00 A (+4d) | 2d? → 1d? | 0% → 100% | 3.5d → none |  |  |
| 111 | 留言板页编码 | 2018-11-07 08:00 → 2018-11-13 08:00 A (+6d) | 2018-11-07 12:00 → 2018-11-15 17:00 A (+8d) | 0.5d? → 3d? | 0% → 100% | 3.5d → none |  |  |
| 112 | 课程页编码 | 2018-11-07 13:00 → 2018-11-29 08:00 A (+22d) | 2018-11-08 12:00 → 2018-12-02 17:00 A (+24d) | 1d? → 2d? | 0% → 100% | 3.5d → none |  |  |
| 113 | 管理员页编码 | 2018-11-01 08:00 → 2018-12-03 08:00 A (+32d) | 2018-11-02 17:00 → 2018-12-05 17:00 A (+33d) | 2d → 3d | 0% → 100% | 7d → none |  |  |
| 114 | 个人中心页编码 |  | 2018-11-08 17:00 → 2018-11-15 17:00 A (+7d) | 1d → 6d | 70% → 100% | 3d → none |  |  |
| 115 | **后端代码编写** | 2018-11-08 08:00 → 2018-11-07 08:00 A (-1d) | 2018-11-12 17:00 → 2018-12-09 17:00 A (+27d) | 3d? → 23d? | 0% → 100% | 1d → none |  | resources 卢彦谚; 吴潘安 → none |
| 116 | 接口实现 | 2018-11-08 08:00 → 2018-11-07 08:00 A (-1d) | 2018-11-08 17:00 → 2018-11-18 17:00 A (+10d) | 1d? → 8d? | 0% → 100% | 1d → none |  |  |
| 117 | 注册登录注销业务编码 | 2018-11-09 08:00 → 2018-11-07 08:00 A (-2d) | 2018-11-09 17:00 → 2018-11-11 17:00 A (+2d) | 1d? → 3d? | 0% → 100% | 1d → none |  |  |
| 118 | 留言板业务编码 | 2018-11-12 08:00 → 2018-11-29 08:00 A (+17d) | 2018-11-12 17:00 → 2018-12-05 17:00 A (+23d) | 1d? → 5d? | 0% → 100% | 1d → none |  | resources 吴潘安 → 卢彦谚 |
| 120 | 课程业务编码 | 2018-11-09 08:00 → 2018-12-03 08:00 A (+24d) | 2018-11-09 17:00 → 2018-12-05 17:00 A (+26d) | 1d? → 3d? | 0% → 100% | 1d → none |  |  |
| 121 | 课程管理业务编码 | 2018-11-12 08:00 → 2018-12-06 08:00 A (+24d) | 2018-11-12 17:00 → 2018-12-09 17:00 A (+27d) | 1d? → 2d? | 0% → 100% | 1d → none |  |  |
| 122 | 数据库搭建 | 2018-11-09 08:00 → 2018-11-18 08:00 A (+9d) | 2018-11-13 17:00 → 2018-11-23 17:00 A (+10d) | 3d → 5d | 0% → 100% | 0d → none |  |  |
| 123 | **开发人员测试(初步调试)** | 2018-11-06 08:00 → 2018-11-30 08:00 A (+24d) | 2018-11-12 17:00 → 2018-12-10 17:00 A (+28d) | 5d → 7d | 0% → 100% | 1d → none |  |  |
| 124 | 前端代码测试 | 2018-11-06 08:00 → 2018-11-30 08:00 A (+24d) | 2018-11-08 17:00 → 2018-12-10 17:00 A (+32d) | 3d → 7d | 0% → 100% | 3d → none |  |  |
| 125 | 后台代码测试 | 2018-11-08 08:00 → 2018-12-03 08:00 A (+25d) | 2018-11-12 17:00 → 2018-12-09 17:00 A (+27d) | 3d → 5d | 0% → 100% | 1d → none |  |  |
| 126 | 开发工作完毕 | 2018-11-13 17:00 → 2018-12-09 17:00 A (+26d) | 2018-11-13 17:00 → 2018-12-09 17:00 A (+26d) |  | 0% → 100% | 0d → none |  |  |
| 127 | **测试** | 2018-11-14 08:00 → 2018-12-01 08:00 A (+17d) | 2018-11-30 17:00 → 2018-12-15 17:00 A (+15d) | 13d → 10d | 0% → 100% | 0d → none |  |  |
| 128 | 制定单元测试计划 | 2018-11-14 08:00 → 2018-12-03 08:00 A (+19d) | 2018-11-14 17:00 → 2018-12-03 12:00 A (+19d) | 1d → 0.5d | 0% → 100% | 0d → none |  |  |
| 129 | 制定整体测试计划 | 2018-11-15 08:00 → 2018-12-03 08:00 A (+18d) | 2018-11-15 17:00 → 2018-12-03 12:00 A (+18d) | 1d → 0.5d | 0% → 100% | 12d → none |  |  |
| 130 | **单元测试** | 2018-11-19 08:00 → 2018-12-01 08:00 A (+12d) | 2018-11-26 17:00 → 2018-12-10 17:00 A (+14d) |  | 0% → 100% | 0d → none |  |  |
| 131 | **审阅模块化代码** | 2018-11-19 08:00 → 2018-12-01 08:00 A (+12d) | 2018-11-21 17:00 → 2018-12-07 17:00 A (+16d) | 3d → 5d | 0% → 100% | 3d → none |  |  |
| 132 | 审阅前端代码 | 2018-11-19 08:00 → 2018-12-03 08:00 A (+14d) | 2018-11-21 17:00 → 2018-12-07 17:00 A (+16d) | 3d → 5d | 0% → 100% | 3d → none |  |  |
| 133 | 审阅后台代码 | 2018-11-19 08:00 → 2018-12-01 08:00 A (+12d) | 2018-11-21 17:00 → 2018-12-07 17:00 A (+16d) | 3d → 5d | 0% → 100% | 3d → none |  |  |
| 134 | 测试组件模块是否符合产品规范 | 2018-11-19 08:00 → 2018-12-03 08:00 A (+14d) | 2018-11-22 17:00 → 2018-12-07 17:00 A (+15d) | 4d → 5d | 0% → 100% | 0d → none |  |  |
| 135 | 找出不符合规范的异常情况 | 2018-11-19 08:00 → 2018-12-03 08:00 A (+14d) | 2018-11-22 17:00 → 2018-12-07 17:00 A (+15d) | 4d → 5d | 0% → 100% | 0d → none |  |  |
| 136 | 修改代码 | 2018-11-20 08:00 → 2018-12-03 08:00 A (+13d) | 2018-11-22 17:00 → 2018-12-07 17:00 A (+15d) | 3d → 5d | 0% → 100% | 0d → none |  |  |
| 137 | 重新测试经过修改的代码 | 2018-11-23 08:00 → 2018-12-06 08:00 A (+13d) | 2018-11-26 17:00 → 2018-12-09 17:00 A (+13d) |  | 0% → 100% | 0d → none |  |  |
| 138 | 单元测试完成 | 2018-11-26 17:00 → 2018-12-10 08:00 A (+14d) | 2018-11-26 17:00 → 2018-12-10 17:00 A (+14d) | 0d → 1d | 0% → 100% | 0d → none |  |  |
| 139 | **整体测试** | 2018-11-27 08:00 → 2018-12-10 08:00 A (+13d) | 2018-11-30 17:00 → 2018-12-15 17:00 A (+15d) | 4d → 5d | 0% → 100% | 0d → none |  |  |
| 140 | 测试模块集成情况 | 2018-11-27 08:00 → 2018-12-10 08:00 A (+13d) | 2018-11-28 17:00 → 2018-12-15 17:00 A (+17d) | 2d → 5d | 0% → 100% | 0d → none |  |  |
| 141 | 找出不符合规范的异常情况 | 2018-11-27 08:00 → 2018-12-10 08:00 A (+13d) | 2018-11-29 17:00 → 2018-12-15 17:00 A (+16d) | 3d → 5d | 0% → 100% | 0d → none |  |  |
| 142 | 修改代码 | 2018-11-27 08:00 → 2018-12-11 08:00 A (+14d) | 2018-11-29 17:00 → 2018-12-15 17:00 A (+16d) | 3d → 4d | 0% → 100% | 0d → none |  |  |
| 143 | 重新测试经过修改的代码 | 2018-11-30 08:00 → 2018-12-11 08:00 A (+11d) | 2018-11-30 17:00 → 2018-12-15 17:00 A (+15d) | 1d → 4d | 0% → 100% | 0d → none |  |  |
| 144 | 整体测试完成 | 2018-11-30 17:00 → 2018-12-15 08:00 A (+15d) | 2018-11-30 17:00 → 2018-12-15 17:00 A (+15d) |  | 0% → 100% | 0d → none |  |  |
| 145 | **试生产** | 2018-11-14 08:00 → 2018-11-26 08:00 A (+12d) | 2018-12-03 17:00 → 2018-12-17 12:00 A (+14d) | 14d? → 15.5d? | 0% → 100% | 0d → none |  |  |
| 146 | 确定测试群体 | 2018-11-14 08:00 → 2018-11-26 08:00 A (+12d) | 2018-11-14 12:00 → 2018-11-26 17:00 A (+12d) | 0.5d → 1d | 0% → 100% | 12.5d → none |  |  |
| 147 | 获得用户反馈 | 2018-12-03 08:00 → 2018-12-14 08:00 A (+11d) | 2018-12-03 12:00 → 2018-12-15 17:00 A (+12d) | 4h? → 8h? | 0% → 100% | 0d → none |  | resources 谢旻珊 → 谢哲威 |
| 148 | 评估测试信息 | 2018-12-03 13:00 → 2018-12-15 08:00 A (+12d) | 2018-12-03 17:00 → 2018-12-17 12:00 A (+14d) |  | 0% → 100% | 0d → none |  |  |
| 149 | 试生产工作完成 | 2018-12-03 17:00 → 2018-12-16 08:00 A (+13d) | 2018-12-03 17:00 → 2018-12-16 17:00 A (+13d) |  | 0% → 100% | 0d → none |  |  |

| ID | Task | Start | Finish | Duration | Complete | Total float | Predecessors | Other |
| --- | --- | --- | --- | --- | --- | --- | --- | --- |
| 150 | **部署** | 2018-10-18 13:13 → 2018-10-26 08:00 A (+8d) | 2018-11-12 13:13 → 2018-12-15 17:00 A (+33d) | 17d → 36d | 0% → 100% | 15.47d → none |  |  |
| 151 | 确定部署策略 | 2018-10-18 13:13 → 2018-10-26 08:00 A (+8d) | 2018-10-19 13:13 → 2018-10-28 17:00 A (+9d) |  | 0% → 100% | 15.47d → none |  |  |
| 152 | 确定部署方法 | 2018-10-19 13:13 → 2018-10-31 08:00 A (+12d) | 2018-10-22 13:13 → 2018-11-01 17:00 A (+10d) | 1d → 2d | 0% → 100% | 15.47d → none |  | resources 吴志祥 → 吴潘安 |
| 153 | 获得部署所需资源 | 2018-10-24 13:13 → 2018-11-08 08:00 A (+15d) | 2018-10-25 13:13 → 2018-11-08 17:00 A (+14d) |  | 0% → 100% | 15.47d → none |  |  |
| 154 | 培训技术支持人员 | 2018-11-01 13:13 → 2018-11-16 08:00 A (+15d) | 2018-11-05 13:13 → 2018-11-19 17:00 A (+14d) |  | 0% → 100% | 15.47d → none |  |  |
| 155 | 部署软件 | 2018-11-07 13:13 → 2018-12-10 08:00 A (+33d) | 2018-11-12 13:13 → 2018-12-15 17:00 A (+33d) | 3d → 5d | 0% → 100% | 15.47d → none |  |  |
| 156 | 部署工作完成 | 2018-11-12 13:13 → 2018-12-15 17:00 A (+33d) | 2018-11-12 13:13 → 2018-12-15 17:00 A (+33d) |  | 0% → 100% | 15.47d → none |  |  |
| 157 | **监控** |  | 2018-12-04 17:00 → 2018-12-04 10:00 A | 49d? → 48.25d? | 34% → 100% | 0d → none |  |  |
| 171 | 短会7 | 2018-11-20 08:00 A | 2018-11-20 10:00 A | 0.25d? → 0.25d | 0% → 100% |  |  |  |
| 172 | 周会8 | 2018-11-22 08:00 A | 2018-11-22 17:00 → 2018-11-22 10:00 A | 1d? → 0.25d | 0% → 100% |  |  |  |
| 173 | 短会8 | 2018-11-27 08:00 A | 2018-11-27 17:00 → 2018-11-27 10:00 A | 1d? → 0.25d | 0% → 100% |  |  |  |
| 174 | 周会9 | 2018-11-29 08:00 A | 2018-11-29 17:00 → 2018-11-29 10:00 A | 1d? → 0.25d | 0% → 100% |  |  |  |
| 175 | 短会9 | 2018-12-04 08:00 A | 2018-12-04 17:00 → 2018-12-04 10:00 A | 1d? → 0.25d | 0% → 100% |  |  |  |
| 176 | **收尾** | 2018-11-16 08:00 → 2018-11-27 08:00 A (+11d) | 2018-12-06 12:00 → 2018-12-18 12:00 A (+12d) | 14.5d? → 15.5d? | 0% → 100% | 0d → none |  |  |
| 177 | **文档整理** | 2018-11-16 08:00 → 2018-11-27 08:00 A (+11d) | 2018-12-03 17:00 → 2018-12-17 12:00 A (+14d) | 12d? → 14.5d? | 0% → 100% | 0d → none |  |  |
| 178 | 制定文档整理计划 | 2018-11-16 08:00 → 2018-11-27 08:00 A (+11d) | 2018-11-16 12:00 → 2018-11-27 17:00 A (+11d) |  | 0% → 100% | 0d → none | 149FS-12d → 149 | was named 制定“帮助”规范计划 |
| 179 | 制定用户手册规范 | 2018-11-28 08:00 → 2018-12-11 08:00 A (+13d) | 2018-11-28 12:00 → 2018-12-11 17:00 A (+13d) | 0.5d? → 1d? | 0% → 100% | 0d → none | 根据反馈修改“帮助”文档 → none |  |
| 180 | 编写用户手册 | 2018-11-28 13:00 → 2018-12-14 08:00 A (+16d) | 2018-11-29 12:00 → 2018-12-15 17:00 A (+16d) |  | 0% → 100% | 0d → none |  |  |
| 181 | 审阅所有的用户文档 | 2018-11-29 13:00 → 2018-12-13 08:00 A (+14d) | 2018-11-29 17:00 → 2018-12-15 17:00 A (+16d) | 0.5d? → 2d? | 0% → 100% | 0d → none |  |  |
| 182 | 根据反馈修改用户文档 | 2018-11-30 08:00 → 2018-12-16 08:00 A (+16d) | 2018-11-30 17:00 → 2018-12-17 12:00 A (+17d) | 1d? → 0.5d? | 0% → 100% | 0d → none |  |  |
| 183 | 文档整理完成 | 2018-12-03 08:00 → 2018-12-17 12:00 A (+14d) | 2018-12-03 17:00 → 2018-12-17 12:00 A (+14d) | 1d? → 0d? | 0% → 100% | 0d → none |  |  |
| 184 | **总结经验教训** | 2018-12-04 08:00 → 2018-12-16 08:00 A (+12d) | 2018-12-06 12:00 → 2018-12-18 12:00 A (+12d) | 2.5d? → 1.5d? | 0% → 100% | 0d → none |  |  |
| 185 | 将经验教训记录存档 | 2018-12-04 08:00 → 2018-12-16 08:00 A (+12d) | 2018-12-04 17:00 → 2018-12-17 12:00 A (+13d) | 1d? → 0.5d? | 0% → 100% | 0d → none |  |  |
| 186 | 分发给工作组成员 | 2018-12-05 08:00 → 2018-12-16 08:00 A (+11d) | 2018-12-05 12:00 → 2018-12-17 12:00 A (+12d) |  | 0% → 100% | 0d → none |  |  |
| 187 | 回顾完成 | 2018-12-05 13:00 → 2018-12-17 13:00 A (+12d) | 2018-12-06 12:00 → 2018-12-18 12:00 A (+12d) |  | 0% → 100% | 0d → none |  |  |
