# 软件开发

How a schedule from MS Project changed from version to version. A marks actual dates.

## Version 1 (saved 2018-12-17, file 项目规划v4.0.mpp)

Note of the change: 希望是最后一版？

| ID | WBS | Task | Duration | Start | Finish | Predecessors | Complete | Constraint |
| --- | --- | --- | --- | --- | --- | --- | --- | --- |
| 1 | 1 | **启动** | 15.5d? | 2018-09-27 08:00 A | 2018-10-18 12:00 A |  | 100% |  |
| 2 |  | 可行性分析 | 0.5d? | 2018-10-08 08:00 A | 2018-10-08 12:00 A |  | 100% |  |
| 3 |  | 项目干系人识别 | 0.5d? | 2018-09-27 08:00 A | 2018-09-27 12:00 A | 2 | 100% |  |
| 4 |  | 制订项目章程 | 0.5d? | 2018-10-18 08:00 A | 2018-10-18 12:00 A | 3 | 100% |  |
| 5 | 2 | **计划** | 7d? | 2018-09-27 08:00 A | 2018-10-07 17:00 A | 1FS-15d | 100% |  |
| 6 | 2.1 | **项目范围计划** | 7d | 2018-09-27 08:00 A | 2018-10-07 17:00 A | 4FS-15d | 100% |  |
| 7 |  | 分析项目范围、目标描述 | 4h | 2018-09-27 08:00 A | 2018-09-27 12:00 A |  | 100% |  |
| 8 |  | 定义预备资源 | 0.5d | 2018-09-27 08:00 A | 2018-09-27 12:00 A | 7 | 100% |  |
| 9 |  | 获得核心资源 | 0.5d | 2018-09-27 08:00 A | 2018-09-27 12:00 A | 8 | 100% |  |
| 10 |  | 确定项目范围规划 | 1d | 2018-10-05 08:00 A | 2018-10-07 17:00 A | 9 | 100% |  |
| 11 |  | 工作分解结构（WBS） | 1d? | 2018-09-28 08:00 A | 2018-09-28 17:00 A | 10 | 100% |  |
| 12 | 2.3 | **项目时间表计划** | 1d? | 2018-09-28 08:00 A | 2018-09-30 12:00 A | 6 | 100% |  |
| 13 |  | 活动资源估算 | 2h? | 2018-09-28 08:00 A | 2018-09-28 10:00 A |  | 100% |  |
| 14 |  | 活动工期估算 | 0.25d? | 2018-09-29 08:00 A | 2018-09-29 10:00 A | 13FF | 100% |  |
| 15 |  | 制订进度计划 | 0.5d? | 2018-09-30 08:00 A | 2018-09-30 12:00 A | 14 | 100% |  |
| 16 |  | 项目成本计划 | 0.12d? | 2018-10-02 08:00 A | 2018-10-02 09:00 A | 12FF | 100% |  |
| 17 | 3 | **执行** | 57.5d? | 2018-09-27 08:00 A | 2018-12-17 12:00 A | 5 | 100% |  |
| 18 | 3.1 | **需求分析调研** | 15.5d? | 2018-09-27 08:00 A | 2018-10-18 12:00 A | 16 | 100% |  |
| 19 |  | 行为需求分析 | 1d | 2018-09-27 08:00 A | 2018-09-27 17:00 A |  | 100% |  |
| 20 | 3.1.2 | **起草初步的需求文档** | 4d? | 2018-09-28 08:00 A | 2018-10-03 17:00 A | 19 | 100% |  |
| 21 |  | 在线编译功能分析 | 0.5d? | 2018-09-28 08:00 A | 2018-09-28 12:00 A |  | 100% |  |
| 22 |  | 每日学习时长功能分析 | 1d? | 2018-09-30 08:00 A | 2018-09-30 17:00 A | 21SS | 100% |  |
| 23 |  | 实例展示功能分析 | 1d? | 2018-10-01 08:00 A | 2018-10-01 17:00 A | 21SS | 100% |  |
| 24 |  | 留言板功能分析 | 1d? | 2018-10-03 08:00 A | 2018-10-03 17:00 A | 21SS | 100% |  |
| 25 |  | 课程选择功能分析 | 1d? | 2018-10-03 08:00 A | 2018-10-03 17:00 A | 21SS | 100% |  |
| 26 |  | 功能性需求确认 | 1d? | 2018-10-04 08:00 A | 2018-10-04 17:00 A | 20 | 100% |  |
| 27 | 3.1.4 | **原型开发** | 9d? | 2018-09-28 08:00 A | 2018-10-10 17:00 A | 26 | 100% |  |
| 28 |  | 实例展示原型设计 | 1d? | 2018-09-30 08:00 A | 2018-09-30 17:00 A |  | 100% |  |
| 29 |  | 课程内容原型设计 | 1d | 2018-09-30 08:00 A | 2018-09-30 17:00 A | 28SS | 100% |  |
| 30 |  | 在线编译原型设计 | 1d | 2018-09-28 08:00 A | 2018-09-28 17:00 A | 29 | 100% |  |
| 31 |  | 个人中心原型设计 | 2d | 2018-10-05 08:00 A | 2018-10-07 17:00 A | 28SS | 100% |  |
| 32 |  | 主页原型设计 | 2d? | 2018-10-09 08:00 A | 2018-10-10 17:00 A | 28SS | 100% |  |
| 33 |  | 非功能性需求分析 | 1d | 2018-10-14 08:00 A | 2018-10-14 17:00 A | 27 | 100% |  |
| 34 |  | 审阅需求文档 | 4h? | 2018-10-15 08:00 A | 2018-10-15 12:00 A | 26, 33 | 100% |  |
| 35 |  | 根据反馈修改需求文档 | 2d | 2018-10-15 08:00 A | 2018-10-16 17:00 A | 34SS | 100% |  |
| 36 |  | 确定交付期限 | 0.5d | 2018-10-16 08:00 A | 2018-10-16 17:00 A | 35 | 100% | finish no earlier than 2018-10-16 17:00 |
| 37 |  | 获得所需资源 | 0.5d | 2018-10-18 08:00 A | 2018-10-18 12:00 A | 35 | 100% |  |
| 38 |  | 需求分析完成 | 0d | 2018-10-18 12:00 A | 2018-10-18 12:00 A | 37 | 100% |  |
| 39 | 3.2 | **设计** | 16d? | 2018-10-19 08:00 A | 2018-11-09 17:00 A | 18FS+1d | 100% |  |
| 40 | 3.2.1 | **概要设计** | 7d? | 2018-10-19 08:00 A | 2018-10-29 17:00 A | 38FS+1d | 100% |  |
| 41 | 3.2.1.1 | **系统结构设计** | 0.5d? | 2018-10-21 08:00 A | 2018-10-22 12:00 A | 38 | 100% |  |
| 42 |  | 系统逻辑架构设计 | 4h? | 2018-10-21 08:00 A | 2018-10-21 12:00 A |  | 100% |  |
| 43 |  | 系统物理架构设计 | 4h? | 2018-10-22 08:00 A | 2018-10-22 12:00 A | 42SS | 100% |  |
| 44 | 3.2.1.2 | **系统数据模型** | 3d? | 2018-10-21 08:00 A | 2018-10-24 17:00 A | 41SS | 100% |  |
| 45 |  | E-R模型设计 | 1d? | 2018-10-22 08:00 A | 2018-10-22 17:00 A |  | 100% |  |
| 46 |  | 数据字典 | 1d? | 2018-10-23 08:00 A | 2018-10-23 17:00 A | 45 | 100% |  |
| 47 |  | 数据库设计 | 1d? | 2018-10-23 08:00 A | 2018-10-23 17:00 A | 46 | 100% |  |
| 48 |  | 系统接口设计 | 1d | 2018-10-21 08:00 A | 2018-10-21 17:00 A | 45 | 100% |  |
| 49 |  | 完善原型 | 4d | 2018-10-21 08:00 A | 2018-10-24 17:00 A | 18 | 100% |  |
| 50 |  | 用户界面设计 | 1d? | 2018-10-23 08:00 A | 2018-10-23 17:00 A | 49 | 100% |  |
| 51 | 3.2.1.3 | **非功能性设计** | 2.12d? | 2018-10-19 08:00 A | 2018-10-23 09:00 A | 44, 41 | 100% |  |
| 52 |  | 性能设计 | 0.12d | 2018-10-23 08:00 A | 2018-10-23 09:00 A |  | 100% |  |
| 53 |  | 可靠性设计 | 0.12d? | 2018-10-23 08:00 A | 2018-10-23 09:00 A | 52 | 100% |  |
| 54 |  | 可用性设计 | 0.12d? | 2018-10-23 08:00 A | 2018-10-23 09:00 A | 53 | 100% |  |
| 55 |  | 安全性设计 | 1d | 2018-10-19 08:00 A | 2018-10-19 17:00 A | 52SS | 100% |  |
| 56 |  | 数据保密设计 | 1d | 2018-10-19 08:00 A | 2018-10-19 17:00 A | 55 | 100% |  |
| 57 |  | 约束和假定 | 1d? | 2018-10-22 08:00 A | 2018-10-22 17:00 A | 51SS | 100% |  |
| 58 |  | 审阅概要设计 | 0.5d | 2018-10-25 08:00 A | 2018-10-25 12:00 A | 41, 44, 51, 57 | 100% |  |
| 59 |  | 根据反馈修改概要设计 | 2d? | 2018-10-25 08:00 A | 2018-10-26 17:00 A | 58SS | 100% |  |
| 60 |  | 概要设计完成 | 1d? | 2018-10-29 08:00 A | 2018-10-29 17:00 A | 59 | 100% |  |
| 61 | 3.2.2 | **详细设计** | 15d? | 2018-10-21 08:00 A | 2018-11-09 17:00 A | 60 | 100% |  |
| 62 |  | 制定系统编程规范约定 | 1d | 2018-10-21 08:00 A | 2018-10-21 17:00 A |  | 100% |  |
| 63 |  | 审阅编程规范 | 1d | 2018-10-21 08:00 A | 2018-10-21 17:00 A | 62 | 100% |  |
| 64 |  | 根据反馈修改编程规范 | 1d | 2018-10-22 08:00 A | 2018-10-22 17:00 A | 63SS | 100% |  |
| 65 | 3.2.2.4 | **系统复用计划** | 0.5d | 2018-11-06 08:00 A | 2018-11-06 12:00 A |  | 100% |  |
| 66 |  | 前端复用计划 | 0.5d | 2018-11-06 08:00 A | 2018-11-06 12:00 A |  | 100% |  |
| 67 |  | 后台复用计划 | 0.5d | 2018-11-06 08:00 A | 2018-11-06 12:00 A | 66SS | 100% |  |
| 68 | 3.2.2.5 | **系统接口设计** | 1d? | 2018-11-04 08:00 A | 2018-11-05 17:00 A |  | 100% |  |
| 69 |  | 内部接口详细设计 | 1d | 2018-11-04 08:00 A | 2018-11-04 17:00 A |  | 100% |  |
| 70 |  | 外部接口详细设计 | 1d | 2018-11-05 08:00 A | 2018-11-05 17:00 A | 69 | 100% |  |

| ID | WBS | Task | Duration | Start | Finish | Predecessors | Complete |
| --- | --- | --- | --- | --- | --- | --- | --- |
| 71 | 3.2.2.6 | **对象模型设计** | 3d? | 2018-10-31 08:00 A | 2018-11-03 17:00 A |  | 100% |
| 72 |  | 对象模型图（类图） | 1d? | 2018-10-31 08:00 A | 2018-10-31 17:00 A |  | 100% |
| 73 |  | 对象描述 | 1d | 2018-11-03 08:00 A | 2018-11-03 17:00 A | 72 | 100% |
| 74 | 3.2.2.7 | **用例详细设计** | 1.5d? | 2018-11-04 08:00 A | 2018-11-06 12:00 A | 73 | 100% |
| 75 |  | 系统顺序图设计 | 2d | 2018-11-04 08:00 A | 2018-11-05 17:00 A |  | 100% |
| 76 |  | 系统状态图设计 | 0.5d? | 2018-11-06 08:00 A | 2018-11-06 12:00 A |  | 100% |
| 77 |  | 审阅详细设计 | 0.5d | 2018-11-08 08:00 A | 2018-11-08 12:00 A | 65, 48, 71, 74 | 100% |
| 78 |  | 根据反馈修改详细设计 | 1d? | 2018-11-08 08:00 A | 2018-11-08 17:00 A | 77SS | 100% |
| 79 |  | 详细设计完成 | 1d? | 2018-11-09 08:00 A | 2018-11-09 17:00 A | 78 | 100% |
| 80 |  | 设计工作完成 | 0d | 2018-11-09 17:00 A | 2018-11-09 17:00 A | 79 | 100% |
| 81 | 3.3 | **开发** | 40d? | 2018-10-16 08:00 A | 2018-12-10 17:00 A | 18FS+2d | 100% |
| 82 |  | 审阅需求文档 | 1d | 2018-10-16 08:00 A | 2018-10-16 17:00 A | 38FS+2d | 100% |
| 83 |  | 制定开发计划 | 1d? | 2018-10-17 08:00 A | 2018-10-17 17:00 A | 82 | 100% |
| 84 |  | 分派任务给开发人员 | 0.12d | 2018-10-18 08:00 A | 2018-10-18 13:13 A | 83 | 100% |
| 85 | 3.3.4 | **知识学习** | 11d | 2018-10-16 08:00 A | 2018-10-30 17:00 A | 84 | 100% |
| 86 |  | 前端知识学习 | 4d | 2018-10-25 08:00 A | 2018-10-30 17:00 A |  | 100% |
| 87 |  | 后端知识学习 | 9d | 2018-10-16 08:00 A | 2018-10-28 17:00 A | 86SS | 100% |
| 88 |  | demo搭建 | 3d | 2018-11-09 08:00 A | 2018-11-13 17:00 A | 85 | 100% |
| 89 | 3.3.6 | **编写代码** | 24d? | 2018-11-06 08:00 A | 2018-12-09 17:00 A | 84FS+5d | 100% |
| 90 | 3.3.6.1 | **前端代码编写** | 22d? | 2018-11-06 08:00 A | 2018-12-05 17:00 A |  | 100% |
| 91 |  | 主页编码 | 2d | 2018-11-06 08:00 A | 2018-11-07 17:00 A |  | 100% |
| 92 |  | 注册登录页编码 | 1d? | 2018-11-09 08:00 A | 2018-11-10 17:00 A | 91 | 100% |
| 93 |  | 留言板页编码 | 3d? | 2018-11-13 08:00 A | 2018-11-15 17:00 A | 92 | 100% |
| 94 |  | 课程页编码 | 2d? | 2018-11-29 08:00 A | 2018-12-02 17:00 A | 93 | 100% |
| 95 |  | 管理员页编码 | 3d | 2018-12-03 08:00 A | 2018-12-05 17:00 A | 91SS | 100% |
| 96 |  | 个人中心页编码 | 6d | 2018-11-08 08:00 A | 2018-11-15 17:00 A | 91SS | 100% |
| 97 | 3.3.6.2 | **后端代码编写** | 23d? | 2018-11-07 08:00 A | 2018-12-09 17:00 A | 90SS+5d | 100% |
| 98 |  | 接口实现 | 8d? | 2018-11-07 08:00 A | 2018-11-18 17:00 A |  | 100% |
| 99 |  | 注册登录注销业务编码 | 3d? | 2018-11-07 08:00 A | 2018-11-11 17:00 A | 98 | 100% |
| 100 |  | 留言板业务编码 | 5d? | 2018-11-29 08:00 A | 2018-12-05 17:00 A | 99 | 100% |
| 101 |  | 个人中心业务编码 | 5d? | 2018-11-15 08:00 A | 2018-11-21 17:00 A | 98 | 100% |
| 102 |  | 课程业务编码 | 3d? | 2018-12-03 08:00 A | 2018-12-05 17:00 A | 98 | 100% |
| 103 |  | 课程管理业务编码 | 2d? | 2018-12-06 08:00 A | 2018-12-09 17:00 A | 102 | 100% |
| 104 |  | 数据库搭建 | 5d | 2018-11-18 08:00 A | 2018-11-23 17:00 A | 90SS+6d | 100% |
| 105 | 3.3.7 | **开发人员测试(初步调试)** | 7d | 2018-11-30 08:00 A | 2018-12-10 17:00 A | 89SS | 100% |
| 106 |  | 前端代码测试 | 7d | 2018-11-30 08:00 A | 2018-12-10 17:00 A | 90FF | 100% |
| 107 |  | 后台代码测试 | 5d | 2018-12-03 08:00 A | 2018-12-09 17:00 A | 97FF | 100% |
| 108 |  | 开发工作完毕 | 0d | 2018-12-09 17:00 A | 2018-12-09 17:00 A | 90, 97, 104 | 100% |
| 109 | 3.4 | **测试** | 10d | 2018-12-01 08:00 A | 2018-12-15 17:00 A | 81 | 100% |
| 110 |  | 制定单元测试计划 | 0.5d | 2018-12-03 08:00 A | 2018-12-03 12:00 A | 108 | 100% |
| 111 |  | 制定整体测试计划 | 0.5d | 2018-12-03 08:00 A | 2018-12-03 12:00 A | 110 | 100% |
| 112 | 3.4.3 | **单元测试** | 6d | 2018-12-01 08:00 A | 2018-12-10 17:00 A | 110FS+2d | 100% |
| 113 | 3.4.3.1 | **审阅模块化代码** | 5d | 2018-12-01 08:00 A | 2018-12-07 17:00 A |  | 100% |
| 114 |  | 审阅前端代码 | 5d | 2018-12-03 08:00 A | 2018-12-07 17:00 A |  | 100% |
| 115 |  | 审阅后台代码 | 5d | 2018-12-01 08:00 A | 2018-12-07 17:00 A | 114SS | 100% |
| 116 |  | 测试组件模块是否符合产品规范 | 5d | 2018-12-03 08:00 A | 2018-12-07 17:00 A | 113SS | 100% |
| 117 |  | 找出不符合规范的异常情况 | 5d | 2018-12-03 08:00 A | 2018-12-07 17:00 A | 116SS | 100% |
| 118 |  | 修改代码 | 5d | 2018-12-03 08:00 A | 2018-12-07 17:00 A | 117FF | 100% |
| 119 |  | 重新测试经过修改的代码 | 2d | 2018-12-06 08:00 A | 2018-12-09 17:00 A | 118 | 100% |
| 120 |  | 单元测试完成 | 1d | 2018-12-10 08:00 A | 2018-12-10 17:00 A | 119 | 100% |
| 121 | 3.4.4 | **整体测试** | 5d | 2018-12-10 08:00 A | 2018-12-15 17:00 A | 112 | 100% |
| 122 |  | 测试模块集成情况 | 5d | 2018-12-10 08:00 A | 2018-12-15 17:00 A |  | 100% |
| 123 |  | 找出不符合规范的异常情况 | 5d | 2018-12-10 08:00 A | 2018-12-15 17:00 A | 122SS | 100% |
| 124 |  | 修改代码 | 4d | 2018-12-11 08:00 A | 2018-12-15 17:00 A | 123FF | 100% |
| 125 |  | 重新测试经过修改的代码 | 4d | 2018-12-11 08:00 A | 2018-12-15 17:00 A | 124 | 100% |
| 126 |  | 整体测试完成 | 0d | 2018-12-15 08:00 A | 2018-12-15 17:00 A | 125 | 100% |
| 127 | 3.5 | **试生产** | 15.5d? | 2018-11-26 08:00 A | 2018-12-17 12:00 A | 108 | 100% |
| 128 |  | 确定测试群体 | 1d | 2018-11-26 08:00 A | 2018-11-26 17:00 A | 108 | 100% |
| 129 |  | 获得用户反馈 | 8h? | 2018-12-14 08:00 A | 2018-12-15 17:00 A | 128, 126 | 100% |
| 130 |  | 评估测试信息 | 0.5d | 2018-12-15 08:00 A | 2018-12-17 12:00 A | 129 | 100% |
| 131 |  | 试生产工作完成 | 0d | 2018-12-16 08:00 A | 2018-12-16 17:00 A | 130 | 100% |
| 132 | 3.6 | **部署** | 36d | 2018-10-26 08:00 A | 2018-12-15 17:00 A | 84 | 100% |
| 133 |  | 确定部署策略 | 1d | 2018-10-26 08:00 A | 2018-10-28 17:00 A | 84 | 100% |
| 134 |  | 确定部署方法 | 2d | 2018-10-31 08:00 A | 2018-11-01 17:00 A | 133 | 100% |
| 135 |  | 获得部署所需资源 | 1d | 2018-11-08 08:00 A | 2018-11-08 17:00 A | 134FS+2d | 100% |
| 136 |  | 培训技术支持人员 | 2d | 2018-11-16 08:00 A | 2018-11-19 17:00 A | 135FS+5d | 100% |
| 137 |  | 部署软件 | 5d | 2018-12-10 08:00 A | 2018-12-15 17:00 A | 136FS+2d | 100% |
| 138 |  | 部署工作完成 | 0d | 2018-12-15 17:00 A | 2018-12-15 17:00 A | 137 | 100% |
| 139 | 4 | **监控** | 48.25d? | 2018-09-27 08:00 A | 2018-12-04 10:00 A | 1SS | 100% |
| 140 |  | 周会1 | 2h | 2018-09-27 08:00 A | 2018-09-27 10:00 A |  | 100% |

| ID | WBS | Task | Duration | Start | Finish | Predecessors | Complete |
| --- | --- | --- | --- | --- | --- | --- | --- |
| 141 |  | 短谈1 | 0.25h | 2018-10-09 08:00 A | 2018-10-09 08:15 A |  | 100% |
| 142 |  | 周会2 | 2h | 2018-10-11 08:00 A | 2018-10-11 10:00 A |  | 100% |
| 143 |  | 短谈2 | 0.25h | 2018-10-16 08:00 A | 2018-10-16 08:15 A |  | 100% |
| 144 |  | 周会3 | 2h | 2018-10-18 08:00 A | 2018-10-18 10:00 A |  | 100% |
| 145 |  | 短谈3 | 0.25h | 2018-10-23 08:00 A | 2018-10-23 08:15 A |  | 100% |
| 146 |  | 周会4 | 2h | 2018-10-25 08:00 A | 2018-10-25 10:00 A |  | 100% |
| 147 |  | 短谈4 | 0.25h | 2018-10-30 08:00 A | 2018-10-30 08:15 A |  | 100% |
| 148 |  | 周会5 | 2h | 2018-11-01 08:00 A | 2018-11-01 10:00 A |  | 100% |
| 149 |  | 短谈5 | 0.25h | 2018-11-06 08:00 A | 2018-11-06 08:15 A |  | 100% |
| 150 |  | 周会6 | 2h | 2018-11-08 08:00 A | 2018-11-08 10:00 A |  | 100% |
| 151 |  | 短谈6 | 0.25d? | 2018-11-13 08:00 A | 2018-11-13 10:00 A |  | 100% |
| 152 |  | 周会7 | 2h? | 2018-11-15 08:00 A | 2018-11-15 10:00 A |  | 100% |
| 153 |  | 短会7 | 0.25d | 2018-11-20 08:00 A | 2018-11-20 10:00 A |  | 100% |
| 154 |  | 周会8 | 0.25d | 2018-11-22 08:00 A | 2018-11-22 10:00 A |  | 100% |
| 155 |  | 短会8 | 0.25d | 2018-11-27 08:00 A | 2018-11-27 10:00 A |  | 100% |
| 156 |  | 周会9 | 0.25d | 2018-11-29 08:00 A | 2018-11-29 10:00 A |  | 100% |
| 157 |  | 短会9 | 0.25d | 2018-12-04 08:00 A | 2018-12-04 10:00 A |  | 100% |
| 158 | 5 | **收尾** | 15.5d? | 2018-11-27 08:00 A | 2018-12-18 12:00 A | 17FS-12d | 100% |
| 159 | 5.1 | **文档整理** | 14.5d? | 2018-11-27 08:00 A | 2018-12-17 12:00 A | 127FS-12d | 100% |
| 160 |  | 制定文档整理计划 | 0.5d? | 2018-11-27 08:00 A | 2018-11-27 17:00 A | 131 | 100% |
| 161 |  | 制定用户手册规范 | 1d? | 2018-12-11 08:00 A | 2018-12-11 17:00 A |  | 100% |
| 162 |  | 编写用户手册 | 1d | 2018-12-14 08:00 A | 2018-12-15 17:00 A | 161 | 100% |
| 163 |  | 审阅所有的用户文档 | 2d? | 2018-12-13 08:00 A | 2018-12-15 17:00 A | 162 | 100% |
| 164 |  | 根据反馈修改用户文档 | 0.5d? | 2018-12-16 08:00 A | 2018-12-17 12:00 A | 163 | 100% |
| 165 |  | 文档整理完成 | 0d? | 2018-12-17 12:00 A | 2018-12-17 12:00 A | 164 | 100% |
| 166 | 5.2 | **总结经验教训** | 1.5d? | 2018-12-16 08:00 A | 2018-12-18 12:00 A | 159 | 100% |
| 167 |  | 将经验教训记录存档 | 0.5d? | 2018-12-16 08:00 A | 2018-12-17 12:00 A | 165 | 100% |
| 168 |  | 分发给工作组成员 | 0.5d? | 2018-12-16 08:00 A | 2018-12-17 12:00 A | 167 | 100% |
| 169 |  | 回顾完成 | 1d? | 2018-12-17 13:00 A | 2018-12-18 12:00 A | 168 | 100% |

## Version 2 (saved 2018-12-20, file 项目综合管理计划v4.1.mpp)

Note of the change: XStrachey 整理“”

Last finish stays 2018-12-18. Complete tasks 135 → 151.

Added:

| ID | Task | Duration | Start | Finish | Predecessors | Resources |
| --- | --- | --- | --- | --- | --- | --- |
| 17 | 项目综合管理计划 | 1d? | 2018-10-03 08:00 A | 2018-10-03 17:00 A | 16 | 谢哲威 |
| 77 | 登录顺序图设计 | 0.5d? | 2018-11-05 08:00 A | 2018-11-05 12:00 A |  | 吴潘安 |
| 78 | 注册顺序图设计 | 0.5d? | 2018-11-05 13:00 A | 2018-11-05 17:00 A | 77 | 吴潘安 |
| 79 | 注销顺序图设计 | 0.5d? | 2018-11-06 08:00 A | 2018-11-06 12:00 A | 78 | 吴潘安 |
| 80 | 课程选择顺序图设计 | 0.5d? | 2018-11-06 13:00 A | 2018-11-06 17:00 A | 79 | 吴潘安 |
| 81 | 专注度管理顺序图设计 | 0.5d? | 2018-11-05 08:00 A | 2018-11-05 12:00 A |  | 谢旻珊 |
| 82 | 个人中心查看顺序图设计 | 0.5d? | 2018-11-05 13:00 A | 2018-11-05 17:00 A | 81 | 谢旻珊 |
| 83 | 实例展示顺序图设计 | 0.5d? | 2018-11-06 08:00 A | 2018-11-06 12:00 A | 82 | 谢旻珊 |
| 84 | 在线编译顺序图设计 | 0.5d? | 2018-11-06 13:00 A | 2018-11-06 17:00 A | 83 | 谢旻珊 |
| 85 | 留言板加载顺序图设计 | 0.5d? | 2018-11-05 08:00 A | 2018-11-05 12:00 A |  | 卢彦谚 |
| 86 | 留言发布顺序图设计 | 0.5d? | 2018-11-05 13:00 A | 2018-11-05 17:00 A | 85 | 卢彦谚 |
| 87 | 留言回复顺序图设计 | 0.5d? | 2018-11-06 08:00 A | 2018-11-06 12:00 A | 86 | 卢彦谚 |
| 88 | 课程添加顺序图设计 | 0.5d? | 2018-11-07 08:00 A | 2018-11-07 12:00 A | 80 | 吴潘安 |
| 89 | 课程删除顺序图设计 | 0.5d? | 2018-11-07 13:00 A | 2018-11-07 17:00 A | 88 | 吴潘安 |
| 90 | 课程内容管理顺序图设计 | 0.5d? | 2018-11-08 08:00 A | 2018-11-08 12:00 A | 89 | 吴潘安 |
| 92 | 用户登录状态图设计 | 0.5d? | 2018-11-05 08:00 A | 2018-11-05 12:00 A |  | 谢珮爽 |
| 93 | 专注度管理状态图设计 | 0.5d? | 2018-11-05 13:00 A | 2018-11-05 17:00 A | 92 | 谢珮爽 |
| 94 | 课程管理状态图设计 | 0.5d? | 2018-11-05 08:00 A | 2018-11-05 12:00 A |  | 吴志祥 |

Changed:

| ID | Task | Start | Finish | Duration | Predecessors | Other |
| --- | --- | --- | --- | --- | --- | --- |
| 19 | **需求分析调研** |  | 2018-10-18 12:00 A → 2018-10-24 17:00 A (+6d) | 15.5d? → 20d? | 16 → 17 |  |
| 28 | **原型设计** |  | 2018-10-10 17:00 A → 2018-10-24 17:00 A (+14d) | 9d? → 19d? |  | was named 原型开发 |
| 34 | 完善原型 |  |  |  | 19 → 29, 30, 31, 32, 33 |  |
| 46 | **系统数据模型** |  | 2018-10-24 17:00 A → 2018-10-23 17:00 A (-1d) | 3d? → 2d? |  |  |
| 51 | 用户界面设计 |  |  |  | 34 → none |  |
| 75 | **用例详细设计** | 2018-11-04 08:00 A → 2018-11-05 08:00 A (+1d) | 2018-11-06 12:00 A → 2018-11-08 12:00 A (+2d) | 1.5d? → 3.5d? |  |  |
| 76 | **系统顺序图设计** | 2018-11-04 08:00 A → 2018-11-05 08:00 A (+1d) | 2018-11-05 17:00 A → 2018-11-08 12:00 A (+3d) | 2d → 3.5d? |  | resources 卢彦谚; 谢旻珊 → none |
| 91 | **系统状态图设计** | 2018-11-06 08:00 A → 2018-11-05 08:00 A (-1d) | 2018-11-06 12:00 A → 2018-11-05 17:00 A (-1d) | 0.5d? → 1d? |  | resources 吴志祥; 谢珮爽 → none |
